# 和墨洛产业园B地块酒店项目室外配套工程已完成进度横道图2025.3.28

Schedule from MS Project, 2025-01-25 to 2025-03-04.
Microsoft

## Calendars

- 标准: Mon-Fri 08:00-12:00, 13:00-17:00; Sat-Sun off. Exceptions (off unless hours are given): 2025-01-25 08:00-12:00, 13:00-17:00, 2025-02-02 08:00-12:00, 13:00-17:00, 2025-02-09 08:00-12:00, 13:00-17:00, 2025-02-15 08:00-12:00, 13:00-17:00.

## Schedule

| ID | WBS | Task | Duration | Start | Finish | Total slack | Constraint | Deadline | [劳动力配置 | 已完成百分比 |
| --- | --- | --- | --- | --- | --- | --- | --- | --- | --- | --- |
| 1 | 1 | **和墨洛产业园B地块酒店项目室外配套工程** | 31d? | 2025-01-25 | 2025-03-04 | 167d |  | 2025-10-15 | 27 | 91.8% |
| 2 | 1.1 | 人员机械进场组织开工 | 1d | 2025-01-25 | 2025-01-26 | 197d | finish no earlier than 2025-01-26 |  |  | 100% |
| 3 | 1.2 | 挖沟槽土方(给水、消防) | 11d | 2025-01-29 | 2025-02-10 | 184d | finish no earlier than 2025-02-10 |  |  | 80% |
| 4 | 1.3 | 挖沟槽土方（排水） | 4d | 2025-02-02 | 2025-02-05 | 188d | finish no earlier than 2025-02-05 |  | 12 | 98% |
| 5 | 1.4 | 回填方（场地内所有开挖管道回填） | 3d | 2025-02-09 | 2025-02-11 | 183d | finish no earlier than 2025-02-11 |  |  | 100% |
| 6 | 1.5 | 余方弃置 | 9d | 2025-02-02 | 2025-02-11 | 183d | finish no earlier than 2025-02-11 |  | 11 | 100% |
| 7 | 1.6 | 给水管道 | 11d | 2025-02-02 | 2025-02-13 | 181d | finish no earlier than 2025-02-13 |  |  | 75% |
| 8 | 1.7 | 消防管道 | 11d | 2025-02-02 | 2025-02-13 | 181d | finish no earlier than 2025-02-13 |  |  | 75% |
| 9 | 1.8 | 喷淋管道 | 11d | 2025-02-02 | 2025-02-13 | 181d | finish no earlier than 2025-02-13 |  |  | 75% |
| 10 | 1.9 | 给水阀门井 | 3d | 2025-02-15 | 2025-02-18 | 177d | finish no earlier than 2025-02-18 |  |  | 85% |
| 11 | 1.10 | 给水阀门井 | 4d? | 2025-02-27 | 2025-03-04 | 167d | finish no earlier than 2025-03-04 |  |  | 95% |
| 12 | 1.11 | HDPE双壁波纹管 | 6d? | 2025-02-03 | 2025-02-09 | 185d | finish no earlier than 2025-02-09 |  | 13 | 95% |
| 13 | 1.12 | HDPE双壁波纹管 | 6d? | 2025-02-03 | 2025-02-09 | 185d | finish no earlier than 2025-02-09 |  | 13 | 95% |
| 14 | 1.13 | 排水检查井 | 9d? | 2025-02-02 | 2025-02-11 | 183d | finish no earlier than 2025-02-11 |  |  | 95% |
| 15 | 1.14 | 3号道路路床开挖 | 4d? | 2025-02-12 | 2025-02-15 | 179d | finish no earlier than 2025-02-15 |  |  | 85% |
| 16 | 1.15 | 3号道路路床东侧清表土 | 2d? | 2025-02-15 | 2025-02-17 | 178d | finish no earlier than 2025-02-17 |  |  | 100% |
| 17 | 1.16 | 3号道路80cm天然级配砂砾换填 | 8d? | 2025-02-13 | 2025-02-21 | 174d | finish no earlier than 2025-02-21 |  | 13 | 85% |
| 18 | 1.17 | 3号道路余方弃置 | 4d? | 2025-02-12 | 2025-02-16 | 179d | finish no earlier than 2025-02-16 |  | 13 | 90% |
| 19 | 1.18 | 2F与3F之间东侧园林绿化场地清表土 | 3d? | 2025-02-25 | 2025-02-27 | 170d | finish no earlier than 2025-02-27 |  |  | 100% |
| 20 | 1.19 | 2F与4F之间东侧园林绿化场地道路挖方 | 2d? | 2025-02-26 | 2025-02-27 | 170d | finish no earlier than 2025-02-27 |  |  | 100% |
| 21 | 1.20 | 2F与5F之间东侧园林绿化场地道路换填 | 1d? | 2025-02-27 | 2025-02-27 | 170d | finish no earlier than 2025-02-27 |  | 11 | 100% |
| 22 | 1.21 | 6号道路路床开挖 | 1d? | 2025-02-27 | 2025-02-27 | 170d | finish no earlier than 2025-02-27 |  | 11 | 100% |
| 23 | 1.22 | 6号道路80cm天然级配砂砾换填 | 1d? | 2025-02-28 | 2025-03-02 | 169d | finish no earlier than 2025-03-02 |  | 11 | 100% |
| 24 | 1.23 | 防水土工布铺设 | 7d? | 2025-02-12 | 2025-02-19 | 176d | finish no earlier than 2025-02-19 |  | 13 | 85% |
