# 5标8号养护道班房总体进度计划2024.8.30

Schedule from MS Project, 2024-09-01 to 2024-10-31.
Microsoft

## Calendars

- 标准: Mon-Fri 08:00-12:00, 13:00-17:00; Sat-Sun off. Exceptions (off unless hours are given): 2024-09-01 08:00-12:00, 13:00-17:00, 2024-09-07 to 2024-09-08 08:00-12:00, 13:00-17:00, 2024-09-14 to 2024-09-15 08:00-12:00, 13:00-17:00, 2024-09-21 08:00-12:00, 13:00-17:00, 2024-09-28 08:00-12:00, 13:00-17:00, 2024-10-05 to 2024-10-06 08:00-12:00, 13:00-17:00.

## Schedule

| ID | WBS | Task | Duration | Start | Finish | Predecessors | Total slack | Free slack | Constraint | Deadline | [劳动力配置 | 机械设备配置 | 周转材料配置 |
| --- | --- | --- | --- | --- | --- | --- | --- | --- | --- | --- | --- | --- | --- |
| 1 | 1 | **5标8号养护道班房（1588.83㎡）** | 53d? | 2024-09-01 | 2024-10-31 |  |  |  |  | 2025-10-15 | 469 |  |  |
| 2 | 1.1 | 项目开工 | 3d | 2024-09-01 | 2024-09-03 |  | 50d |  | finish no earlier than 2024-09-03 |  | 13 | 挖机2台、装载机2台 | 临建设施设备材料1批 |
| 3 | 1.2 | 正负零封顶 | 8d | 2024-09-03 | 2024-09-10 |  | 43d |  | finish no earlier than 2024-09-10 |  | 65 |  |  |
| 4 | 1.3 | 主体结构封顶 | 26d | 2024-09-14 | 2024-10-11 |  | 14d |  | start no earlier than 2024-09-14 |  | 96 |  |  |
| 5 | 1.4 | 二次结构、装饰装修 | 23d | 2024-09-26 | 2024-10-23 |  | 6d |  | finish no earlier than 2024-10-23 |  | 80 |  |  |
| 6 | 1.5 | 室内给排水 | 25d | 2024-09-15 | 2024-10-11 |  | 14d |  | finish no earlier than 2024-10-11 |  | 30 |  |  |
| 7 | 1.6 | 电气设备安装 | 20d | 2024-09-26 | 2024-10-18 |  | 9d |  | finish no earlier than 2024-10-18 |  | 35 |  |  |
| 8 | 1.7 | 采暖、消防、通风 | 26d | 2024-09-26 | 2024-10-28 |  | 3d |  | finish no earlier than 2024-10-28 |  | 35 |  |  |
| 9 | 1.8 | 屋面及防排水、外墙及隔热保温 | 28d | 2024-09-26 | 2024-10-30 |  | 1d |  | finish no earlier than 2024-10-30 |  | 65 |  |  |
| 10 | 1.9 | 室外工程 | 29d | 2024-09-26 | 2024-10-31 |  | 0d |  | finish no earlier than 2024-10-31 |  | 50 |  |  |
| 11 | 1.10 | **单位单项工程施工计划** | 53d? | 2024-09-01 | 2024-10-31 |  | -10d | 0d |  |  | 164 |  |  |
| 12 | 1.10.1 | **土方开挖** | 3d | 2024-09-01 | 2024-09-03 |  | 40d |  |  |  | 18 | 挖机4台，装载机2台，出渣车6辆 |  |
| 13 | 1.10.1.1 | 1#综合楼 | 3d | 2024-09-01 | 2024-09-03 |  | 48d | 0d | finish no earlier than 2024-09-03 |  |  | 挖机1台，装载机1台，出渣车2辆 |  |
| 14 | 1.10.1.2 | 2#机械库 | 2d | 2024-09-01 | 2024-09-02 |  | 306d |  | finish no earlier than 2024-09-02 |  |  | 挖机1台，出渣车1辆 |  |
| 15 | 1.10.1.3 | 3#设备用房 | 3d | 2024-09-01 | 2024-09-03 |  | 305d |  | finish no earlier than 2024-09-03 |  |  | 挖机1台，装载机1台，出渣车2辆 |  |
| 16 | 1.10.1.4 | 4#垃圾中转站 | 2d | 2024-09-01 | 2024-09-02 |  | 40d | 0d | finish no earlier than 2024-09-02 |  |  | 挖机1台，出渣车1辆 |  |
| 17 | 1.10.2 | 边坡支护 | 3d | 2024-09-01 | 2024-09-03 |  | 305d |  | finish no earlier than 2024-09-03 |  |  | 挖机1台 | 支护材料1批 |
| 18 | 1.10.3 | **1#综合楼（737.77㎡）** | 47d? | 2024-09-04 | 2024-10-28 |  |  |  |  |  | 162 | 各班组总人考虑工序穿插，约需150人 |  |
| 19 | 1.10.3.1 | **地基与基础** | 11d | 2024-09-04 | 2024-09-14 |  | 19d |  |  |  | 21 |  |  |
| 20 | 1.10.3.1.1 | 基底整平 | 1d | 2024-09-04 | 2024-09-04 |  | 304d |  | finish no earlier than 2024-09-04 |  |  | 挖机1台 | 人工工具1批 |
| 21 | 1.10.3.1.2 | 基础垫层 | 2d | 2024-09-04 | 2024-09-05 |  | 303d |  | finish no earlier than 2024-09-05 |  |  | 砼约15方，泵车等浇筑设备 | 垫层模板约50平方 |
| 22 | 1.10.3.1.3 | 独立基础 | 3d | 2024-09-07 | 2024-09-09 |  | 16d | 0d | finish no earlier than 2024-09-09 |  | 16 | 砼约120方，泵车等浇筑设备 | 基础模板约300㎡ |
| 23 | 1.10.3.1.4 | 基础梁柱 | 5d | 2024-09-10 | 2024-09-14 | 22 | 16d | 0d |  |  | 16 | 砼约120方，泵车等浇筑设备 | 梁柱模板约1200㎡ |
| 24 | 1.10.3.2 | 回填 | 2d | 2024-09-15 | 2024-09-16 | 23 | 16d | 0d | finish no earlier than 2024-09-16 |  |  | 挖机2台，打夯机2台，渣土车2辆，装载机1辆 |  |

| ID | WBS | Task | Duration | Start | Finish | Predecessors | Total slack | Free slack | Constraint | [劳动力配置 | 机械设备配置 | 周转材料配置 |
| --- | --- | --- | --- | --- | --- | --- | --- | --- | --- | --- | --- | --- |
| 25 | 1.10.3.3 | **主体结构** | 23d | 2024-09-17 | 2024-10-11 |  |  |  |  | 40 | 模板工15人，钢筋工10人，架子工10人，砼工5人 |  |
| 26 | 1.10.3.3.1 | 一层梁板柱 | 7d | 2024-09-17 | 2024-09-24 | 24 | 16d | 0d | start no earlier than 2024-09-14 | 40 |  | 周转料模板等约2500㎡ |
| 27 | 1.10.3.3.2 | 二层梁板柱 | 7d | 2024-09-25 | 2024-10-02 | 26 | 16d | 2d |  | 40 |  | 周转料模板等约2500㎡ |
| 28 | 1.10.3.3.3 | 屋面层 | 7d | 2024-10-05 | 2024-10-11 | 27 | 14d |  | start no earlier than 2024-10-05 | 40 |  | 周转料模板等约3000㎡ |
| 29 | 1.10.3.4 | **二次结构及装饰装修** | 21d | 2024-09-27 | 2024-10-22 |  |  |  |  | 35 | 二次砌体及抹灰20人，装饰装修15人 |  |
| 30 | 1.10.3.4.1 | 一层 | 8d | 2024-09-27 | 2024-10-05 |  | 20d |  | start no earlier than 2024-09-27 | 35 |  |  |
| 31 | 1.10.3.4.2 | 二层 | 8d | 2024-10-11 | 2024-10-22 |  | 7d |  | start no earlier than 2024-10-11 | 35 |  |  |
| 32 | 1.10.3.5 | **给排水及采暖工程** | 15d | 2024-09-25 | 2024-10-10 |  |  |  |  | 20 | 管道预埋5人，管网安装15人 |  |
| 33 | 1.10.3.5.1 | 套管预留预埋 | 1d | 2024-09-25 | 2024-09-25 |  | 29d |  | start no earlier than 2024-09-25 |  |  |  |
| 34 | 1.10.3.5.2 | 一层管道安装 | 2d | 2024-09-25 | 2024-09-26 |  | 28d |  | start no earlier than 2024-09-25 | 15 |  |  |
| 35 | 1.10.3.5.3 | 二层管道安装 | 2d | 2024-10-05 | 2024-10-06 |  | 270d | 0d | start no earlier than 2024-10-05 | 15 |  |  |
| 36 | 1.10.3.5.4 | 一层地辐热管道、分集水器安装 | 3d | 2024-09-25 | 2024-09-27 |  | 27d |  | start no earlier than 2024-09-25 | 15 |  |  |
| 37 | 1.10.3.5.5 | 二层地辐热管道、分集水器安装 | 3d | 2024-10-07 | 2024-10-09 | 35 | 270d | 0d |  | 15 |  |  |
| 38 | 1.10.3.5.6 | 给水打压、闭水试验 | 1d | 2024-10-10 | 2024-10-10 | 37 | 270d |  |  |  |  |  |
| 39 | 1.10.3.6 | **建筑电气及设备安装** | 7d | 2024-10-10 | 2024-10-18 |  |  |  |  | 23 | 电焊工3人，配管线安装12人，设备安装8人 |  |
| 40 | 1.10.3.6.1 | 防雷接地焊接 | 2d | 2024-10-10 | 2024-10-11 |  | 14d |  | finish no earlier than 2024-10-11 |  |  |  |
| 41 | 1.10.3.6.2 | 一层主体配管线 | 3d | 2024-10-06 | 2024-10-08 |  | 17d |  | start no earlier than 2024-10-06 | 12 |  |  |
| 42 | 1.10.3.6.3 | 二层主体配管线 | 3d | 2024-10-11 | 2024-10-15 |  | 12d |  | start no earlier than 2024-10-11 | 12 |  |  |
| 43 | 1.10.3.6.4 | 一层电气设备照明安装调试 | 3d | 2024-10-09 | 2024-10-11 |  | 14d |  | start no earlier than 2024-10-09 |  |  |  |
| 44 | 1.10.3.6.5 | 二层电气设备照明安装调试 | 3d | 2024-10-16 | 2024-10-18 |  | 9d |  | start no earlier than 2024-10-16 |  |  |  |
| 45 | 1.10.3.7 | **通风、消防与空调工程** | 17d | 2024-10-06 | 2024-10-28 |  |  |  |  | 23 | 管线加工制作6人，管阀铺管12人，设备安装5人 |  |
| 46 | 1.10.3.7.1 | 风管、消防管件制作安装 | 4d | 2024-10-06 | 2024-10-09 |  | 16d |  | start no earlier than 2024-10-06 |  |  |  |
| 47 | 1.10.3.7.2 | 管、阀安装 | 2d | 2024-10-09 | 2024-10-10 |  | 9d | 0d | start no earlier than 2024-10-09 | 12 |  |  |
| 48 | 1.10.3.7.3 | 管阀调试及启闭试验 | 2d | 2024-10-11 | 2024-10-14 | 47 | 9d | 0d | start no earlier than 2024-10-11 |  |  |  |
| 49 | 1.10.3.7.4 | 机组设备安装 | 4d | 2024-10-15 | 2024-10-18 | 48 | 9d |  | start no earlier than 2020-03-19 |  |  |  |
| 50 | 1.10.3.8 | 屋面和外墙 | 10d | 2024-10-17 | 2024-10-30 |  | 1d |  | finish no earlier than 2024-10-30 | 40 | 屋面砼工8人，防水10人，保温12人，架子工10人 |  |
| 51 | 1.10.3.9 | 其他设备安装调试 | 5d | 2024-10-22 | 2024-10-28 |  | 3d |  | start no earlier than 2024-10-22 |  |  |  |

| ID | WBS | Task | Duration | Start | Finish | Predecessors | Total slack | Free slack | Constraint | [劳动力配置 | 机械设备配置 |
| --- | --- | --- | --- | --- | --- | --- | --- | --- | --- | --- | --- |
| 52 | 1.10.3.10 | **2#机械库（436.63㎡）** | 36d | 2024-09-03 | 2024-10-10 |  |  |  |  | 131 | 各班组总人数，考虑工序穿插和栋号穿插，约需90人 |
| 53 | 1.10.3.10.1 | **地基与基础** | 13d | 2024-09-03 | 2024-09-15 |  |  |  |  | 21 | 杂工3人，模板工10人，钢筋工8人 |
| 54 | 1.10.3.10.1.1 | 基底整平 | 1d | 2024-09-03 | 2024-09-03 |  | 32d | 0d | start no earlier than 2024-09-03 |  |  |
| 55 | 1.10.3.10.1.2 | 基础垫层 | 1d | 2024-09-04 | 2024-09-04 | 54 | 32d | 0d | start no earlier than 2019-12-05 |  |  |
| 56 | 1.10.3.10.1.3 | 独立基础 | 4d | 2024-09-05 | 2024-09-08 | 55 | 32d | 0d | start no earlier than 2024-08-27 | 18 |  |
| 57 | 1.10.3.10.1.4 | 基础梁柱 | 5d | 2024-09-09 | 2024-09-13 | 56 | 32d | 1d |  | 18 |  |
| 58 | 1.10.3.10.2 | 回填 | 1d | 2024-09-15 | 2024-09-15 | 57 | 31d | 7d | start no earlier than 2024-09-15 |  |  |
| 59 | 1.10.3.11 | **主体结构** | 12d | 2024-09-15 | 2024-09-27 |  |  |  |  | 26 | 模板工10人，钢筋工8人，架子工8人 |
| 60 | 1.10.3.11.1 | 一层梁板柱 | 6d | 2024-09-15 | 2024-09-20 |  | 27d | 0d | start no earlier than 2024-09-15 | 26 |  |
| 61 | 1.10.3.11.2 | 屋面层 | 6d | 2024-09-21 | 2024-09-27 | 60 | 27d |  | start no earlier than 2024-09-21 | 26 |  |
| 62 | 1.10.3.12 | **二次结构及装饰装修** | 10d | 2024-09-28 | 2024-10-08 |  |  |  |  | 30 | 二次砌体抹灰18人，装饰装修12人 |
| 63 | 1.10.3.12.1 | 一层 | 10d | 2024-09-28 | 2024-10-08 |  | 17d |  | start no earlier than 2024-09-28 | 30 |  |
| 64 | 1.10.3.13 | **给排水及采暖工程** | 14d | 2024-09-15 | 2024-09-30 |  | 280d |  |  | 14 | 管线5人，安装9人 |
| 65 | 1.10.3.13.1 | 套管预留预埋 | 1d | 2024-09-15 | 2024-09-15 |  | 292d | 0d | start no earlier than 2024-09-15 |  |  |
| 66 | 1.10.3.13.2 | 一层管道安装 | 2d | 2024-09-28 | 2024-09-30 |  | 280d |  | start no earlier than 2024-09-28 |  |  |
| 67 | 1.10.3.14 | **建筑电气及设备安装** | 6d | 2024-09-28 | 2024-10-04 |  | 273d |  |  | 20 | 焊工2人，管线8人，安装8人 |
| 68 | 1.10.3.14.1 | 防雷接地焊接 | 2d | 2024-09-28 | 2024-09-30 |  | 273d | 0d | start no earlier than 2024-09-28 |  |  |
| 69 | 1.10.3.14.2 | 一层主体配管线 | 2d | 2024-10-01 | 2024-10-02 | 68 | 276d | 0d |  |  |  |
| 70 | 1.10.3.14.3 | 一层电气设备照明安装调试 | 2d | 2024-10-03 | 2024-10-04 | 69 | 276d |  |  |  |  |
| 71 | 1.10.3.15 | **通风、消防与空调工程** | 8d | 2024-09-28 | 2024-10-06 |  | 13d |  |  | 20 | 加工5人，管线5人，安装10人 |
| 72 | 1.10.3.15.1 | 风管、消防管件制作安装 | 3d | 2024-09-28 | 2024-10-01 |  | 13d | 0d | start no earlier than 2024-09-28 |  |  |
| 73 | 1.10.3.15.2 | 管、阀安装 | 2d | 2024-10-02 | 2024-10-03 | 72 | 274d | 0d |  |  |  |
| 74 | 1.10.3.15.3 | 机组设备安装 | 3d | 2024-10-04 | 2024-10-06 | 73 | 274d |  | start no earlier than 2020-03-19 | 10 |  |
| 75 | 1.10.3.16 | 屋面和外墙 | 7d | 2024-09-28 | 2024-10-05 |  | -36d | 0d | start no earlier than 2024-09-28 | 26 | 砼工5人，防水8人，保温8人，架子工5人 |
| 76 | 1.10.3.17 | 其他设备安装调试 | 5d | 2024-10-06 | 2024-10-10 | 75 | -36d | 0d | finish no earlier than 2020-06-15 |  |  |

| ID | WBS | Task | Duration | Start | Finish | Predecessors | Total slack | Free slack | Constraint | [劳动力配置 | 机械设备配置 |
| --- | --- | --- | --- | --- | --- | --- | --- | --- | --- | --- | --- |
| 77 | 1.10.3.18 | **3#设备用房（238.01㎡）** | 50d? | 2024-09-04 | 2024-10-31 | 76 |  |  |  | 132 | 各班组总人数，考虑工序穿插和栋号穿插，约需100人 |
| 78 | 1.10.3.18.1 | **地基与基础** | 22d | 2024-09-04 | 2024-09-26 |  |  |  |  | 32 | 钻进3人，杂工5人，模板10人，钢筋10人，砼工6人 |
| 79 | 1.10.3.18.1.1 | 取水井 | 2d | 2024-09-04 | 2024-09-05 | 13 | 48d |  | start no earlier than 2024-09-01 |  |  |
| 80 | 1.10.3.18.1.2 | 基底整平 | 1d | 2024-09-05 | 2024-09-05 |  | 29d | 0d | start no earlier than 2024-09-05 |  |  |
| 81 | 1.10.3.18.1.3 | 基础垫层 | 1d | 2024-09-06 | 2024-09-06 | 80 | 29d | 0d | start no earlier than 2019-12-05 | 10 |  |
| 82 | 1.10.3.18.1.4 | 独立基础 | 4d | 2024-09-07 | 2024-09-10 | 81 | 29d | 0d | start no earlier than 2024-09-07 | 25 |  |
| 83 | 1.10.3.18.1.5 | 基础梁柱 | 5d | 2024-09-11 | 2024-09-15 | 82 | 29d | 0d |  | 25 |  |
| 84 | 1.10.3.18.2 | 回填 | 2d | 2024-09-16 | 2024-09-17 | 83 | 29d | 5d | start no earlier than 2020-02-05 |  |  |
| 85 | 1.10.3.18.3 | **主体结构** | 21d | 2024-09-18 | 2024-10-10 |  |  |  |  | 42 | 模板工12人，钢筋12人，砼工6人，架子工12人 |
| 86 | 1.10.3.18.3.1 | 负一层（消防水池） | 5d | 2024-09-18 | 2024-09-23 |  | 24d | 0d | start no earlier than 2024-09-18 | 42 |  |
| 87 | 1.10.3.18.3.2 | 一层梁板柱 | 7d | 2024-09-24 | 2024-10-01 | 84, 58, 86 | 24d |  | start no earlier than 2024-09-15 | 42 |  |
| 88 | 1.10.3.18.3.3 | 屋面层 | 7d | 2024-10-04 | 2024-10-10 |  | 15d |  | start no earlier than 2024-10-04 | 42 |  |
| 89 | 1.10.3.18.4 | **二次结构及装饰装修** | 10d | 2024-10-10 | 2024-10-23 |  |  |  |  | 32 | 二次砌体和抹灰18人，装饰15人 |
| 90 | 1.10.3.18.4.1 | 一层 | 10d | 2024-10-10 | 2024-10-23 |  | 6d |  | start no earlier than 2024-10-10 | 32 |  |
| 91 | 1.10.3.18.5 | **给排水及采暖工程** | 24d | 2024-09-16 | 2024-10-11 |  | 269d |  |  | 25 | 管线13人，安装12人 |
| 92 | 1.10.3.18.5.1 | 套管预留预埋 | 1d | 2024-09-16 | 2024-09-16 | 65 | 292d |  | start no earlier than 2019-12-06 |  |  |
| 93 | 1.10.3.18.5.2 | 负一层管道安装 | 2d | 2024-09-24 | 2024-09-25 |  | 284d |  | start no earlier than 2024-09-24 | 10 |  |
| 94 | 1.10.3.18.5.3 | 一层管道安装 | 3d | 2024-10-02 | 2024-10-04 |  | 269d | 0d | start no earlier than 2024-10-02 | 13 |  |
| 95 | 1.10.3.18.5.4 | 一层泵房设备安装 | 3d | 2024-10-05 | 2024-10-07 | 94 | 269d | 0d |  | 12 |  |
| 96 | 1.10.3.18.5.5 | 一层设备房、分集水器安装 | 3d | 2024-10-08 | 2024-10-10 | 95 | 269d | 0d |  | 12 |  |
| 97 | 1.10.3.18.5.6 | 给水打压、闭水试验 | 1d | 2024-10-11 | 2024-10-11 | 96 | 269d |  |  |  |  |
| 98 | 1.10.3.18.6 | **建筑电气及设备安装** | 7d | 2024-10-10 | 2024-10-18 |  | 264d |  |  | 15 | 焊工3人，管线12人，安装12人 |
| 99 | 1.10.3.18.6.1 | 防雷接地焊接 | 2d | 2024-10-10 | 2024-10-11 | 68 | 264d | 0d | start no earlier than 2024-10-10 |  |  |
| 100 | 1.10.3.18.6.2 | 一层主体配管线 | 3d | 2024-10-14 | 2024-10-16 | 99 | 264d | 0d |  | 12 |  |
| 101 | 1.10.3.18.6.3 | 一层电气设备照明安装调试 | 2d | 2024-10-17 | 2024-10-18 | 100 | 264d |  |  | 12 |  |

| ID | WBS | Task | Duration | Start | Finish | Predecessors | Total slack | Free slack | Constraint | [劳动力配置 | 机械设备配置 |
| --- | --- | --- | --- | --- | --- | --- | --- | --- | --- | --- | --- |
| 102 | 1.10.3.18.7 | **通风、消防与空调工程** | 11d | 2024-10-10 | 2024-10-24 |  |  |  |  | 30 | 加工8人，管线12人，安装10人 |
| 103 | 1.10.3.18.7.1 | 风管、消防管件制作安装 | 4d | 2024-10-10 | 2024-10-15 | 72 | 5d | 0d | start no earlier than 2024-10-10 |  |  |
| 104 | 1.10.3.18.7.2 | 管、阀安装 | 2d | 2024-10-16 | 2024-10-17 | 103 | 5d | 0d |  | 12 |  |
| 105 | 1.10.3.18.7.3 | 管阀调试及启闭试验 | 2d | 2024-10-18 | 2024-10-21 | 104 | 5d | 0d | start no earlier than 2020-03-16 |  |  |
| 106 | 1.10.3.18.7.4 | 机组设备安装 | 3d | 2024-10-22 | 2024-10-24 | 105 | 5d |  | start no earlier than 2020-03-19 | 10 |  |
| 107 | 1.10.3.18.8 | 屋面和外墙 | 10d | 2024-10-11 | 2024-10-24 |  | 0d |  | start no earlier than 2024-10-11 | 53 | 砼工12人，防水16人，保温15人，架子工10人 |
| 108 | 1.10.3.18.9 | 其他设备安装调试 | 5d | 2024-10-25 | 2024-10-31 | 107 | 0d |  | finish no earlier than 2020-06-15 |  |  |
| 109 | 1.10.3.18.10 | **4#垃圾中转站** | 27d | 2024-09-03 | 2024-10-01 |  |  |  |  | 62 | 各班组总人数，考虑工序穿插和栋号穿插，约需30人 |
| 110 | 1.10.3.18.10.1 | **地基与基础** | 10d | 2024-09-03 | 2024-09-12 |  | 40d |  |  | 16 | 杂工3人，模板工8人，钢筋工5人 |
| 111 | 1.10.3.18.10.1.1 | 基底整平 | 1d | 2024-09-03 | 2024-09-03 | 16 | 40d | 0d | finish no earlier than 2019-12-04 |  |  |
| 112 | 1.10.3.18.10.1.2 | 基础垫层 | 1d | 2024-09-04 | 2024-09-04 | 111 | 40d | 0d | start no earlier than 2019-12-05 |  |  |
| 113 | 1.10.3.18.10.1.3 | 独立基础 | 3d | 2024-09-05 | 2024-09-07 | 112 | 40d | 0d | start no earlier than 2024-08-27 | 13 |  |
| 114 | 1.10.3.18.10.1.4 | 基础梁柱 | 5d | 2024-09-08 | 2024-09-12 | 113 | 40d | 0d |  | 13 |  |
| 115 | 1.10.3.18.10.2 | 回填 | 1d | 2024-09-13 | 2024-09-13 | 114 | 40d |  | start no earlier than 2020-02-05 |  |  |
| 116 | 1.10.3.18.10.3 | **主体结构** | 11d | 2024-09-14 | 2024-09-25 |  |  |  |  | 20 | 模板工8人，钢筋工6人，架子工6人 |
| 117 | 1.10.3.18.10.3.1 | 一层梁板柱 | 5d | 2024-09-14 | 2024-09-18 |  | 284d | 0d | start no earlier than 2024-09-14 | 20 |  |
| 118 | 1.10.3.18.10.3.2 | 屋面层 | 6d | 2024-09-19 | 2024-09-25 | 117 | 284d |  |  | 20 |  |
| 119 | 1.10.3.18.10.4 | **二次结构及装饰装修** | 7d | 2024-09-26 | 2024-10-03 |  |  |  |  | 16 | 二次砌体抹灰10人，装饰装修6人 |
| 120 | 1.10.3.18.10.4.1 | 一层 | 7d | 2024-09-26 | 2024-10-03 |  | 22d |  | start no earlier than 2024-09-26 | 16 |  |
| 121 | 1.10.3.18.10.5 | **给排水及采暖工程** | 13d | 2024-09-14 | 2024-09-27 |  | 282d |  |  |  |  |
| 122 | 1.10.3.18.10.5.1 | 套管预留预埋 | 1d | 2024-09-14 | 2024-09-14 |  | 294d |  | start no earlier than 2024-09-14 |  |  |
| 123 | 1.10.3.18.10.5.2 | 一层管道安装 | 2d | 2024-09-26 | 2024-09-27 |  | 282d |  | start no earlier than 2024-09-26 |  |  |
| 124 | 1.10.3.18.10.6 | **建筑电气及设备安装** | 5d | 2024-09-26 | 2024-10-01 |  |  |  |  |  |  |
| 125 | 1.10.3.18.10.6.1 | 防雷接地焊接 | 1d | 2024-09-26 | 2024-09-26 |  | 281d | 0d | start no earlier than 2024-09-26 |  |  |
| 126 | 1.10.3.18.10.6.2 | 一层主体配管线 | 2d | 2024-09-27 | 2024-09-28 | 125 | 281d |  |  |  |  |
| 127 | 1.10.3.18.10.7 | 屋面和外墙 | 5d | 2024-09-26 | 2024-10-01 |  | 24d |  | start no earlier than 2024-09-26 | 10 |  |
| 128 | 1.10.3.18.10.8 | 其他设备安装调试 | 3d | 2024-09-28 | 2024-10-01 |  | 24d |  | start no earlier than 2024-09-28 |  |  |

| ID | WBS | Task | Duration | Start | Finish | Predecessors | Total slack | Free slack | Constraint | [劳动力配置 | 机械设备配置 |
| --- | --- | --- | --- | --- | --- | --- | --- | --- | --- | --- | --- |
| 129 | 1.10.3.18.10.9 | **室外工程** | 29d | 2024-09-26 | 2024-10-31 |  |  |  |  | 109 | 各班组总人数，考虑工序穿插和栋号穿插，约需50人 |
| 130 | 1.10.3.18.10.9.1 | 污水处理设备 | 5d | 2024-09-26 | 2024-10-01 |  | 24d |  | start no earlier than 2024-09-26 |  | 安装工6人，吊车，挖机等相应机械配套 |
| 131 | 1.10.3.18.10.9.2 | 化粪池 | 3d | 2024-09-26 | 2024-09-28 |  | 26d |  | start no earlier than 2024-09-26 |  |  |
| 132 | 1.10.3.18.10.9.3 | 调节池 | 3d | 2024-09-26 | 2024-09-28 |  | 26d |  | start no earlier than 2024-09-26 |  |  |
| 133 | 1.10.3.18.10.9.4 | 污泥池 | 3d | 2024-09-26 | 2024-09-28 |  | 26d |  | start no earlier than 2024-09-26 |  |  |
| 134 | 1.10.3.18.10.9.5 | **室外给排水** | 11d | 2024-09-30 | 2024-10-10 |  |  |  |  | 18 | 挖机1台，管线6人，检查井12人 |
| 135 | 1.10.3.18.10.9.5.1 | 沟槽开挖回填 | 1d | 2024-09-30 | 2024-09-30 |  | 272d | 0d | start no earlier than 2024-09-30 |  |  |
| 136 | 1.10.3.18.10.9.5.2 | 管线铺设 | 3d | 2024-10-01 | 2024-10-03 | 135 | 272d | 0d |  |  |  |
| 137 | 1.10.3.18.10.9.5.3 | 检查井 | 5d | 2024-10-04 | 2024-10-08 | 136 | 272d |  |  | 12 |  |
| 138 | 1.10.3.18.10.9.5.4 | **室外暖通** | 8d | 2024-09-30 | 2024-10-07 |  |  |  |  | 16 | 挖机1台，管线10人，安装6人 |
| 139 | 1.10.3.18.10.9.5.4.1 | 沟槽开挖回填 | 2d | 2024-09-30 | 2024-10-01 |  | 18d | 0d | start no earlier than 2024-09-30 |  |  |
| 140 | 1.10.3.18.10.9.5.4.2 | 直埋式暖通保温管线铺设 | 3d | 2024-10-02 | 2024-10-04 | 139 | 18d | 0d |  | 10 |  |
| 141 | 1.10.3.18.10.9.5.4.3 | 管阀调试及启闭试验 | 3d | 2024-10-05 | 2024-10-07 | 140 | 18d |  | start no earlier than 2020-03-16 |  |  |
| 142 | 1.10.3.18.10.9.5.4.4 | **室外消防** | 7d | 2024-09-30 | 2024-10-06 |  |  |  |  | 14 | 挖机1台，管线8人，安装6人 |
| 143 | 1.10.3.18.10.9.5.4.4.1 | 沟槽开挖回填 | 2d | 2024-09-30 | 2024-10-01 |  | 274d | 0d | start no earlier than 2024-09-30 |  |  |
| 144 | 1.10.3.18.10.9.5.4.4.2 | 管线铺设 | 2d | 2024-10-02 | 2024-10-03 | 143 | 274d | 0d |  |  |  |
| 145 | 1.10.3.18.10.9.5.4.4.3 | 室外消防栓 | 3d | 2024-10-04 | 2024-10-06 | 144 | 274d |  |  |  |  |
| 146 | 1.10.3.18.10.9.6 | **室外电气** | 10d | 2024-09-30 | 2024-10-09 |  |  |  |  | 25 | 挖机1台，管线5人，砌筑井12人，安装8人 |
| 147 | 1.10.3.18.10.9.6.1 | 沟槽开挖回填 | 2d | 2024-09-30 | 2024-10-01 |  | 9d | 0d | start no earlier than 2024-09-30 |  |  |
| 148 | 1.10.3.18.10.9.6.2 | 砌筑井 | 5d | 2024-10-02 | 2024-10-06 | 147 | 9d | 0d |  | 12 |  |
| 149 | 1.10.3.18.10.9.6.3 | 缆线铺设及室外照明 | 3d | 2024-10-07 | 2024-10-09 | 148 | 9d | 1d |  |  |  |
| 150 | 1.10.3.18.10.9.7 | **室外土建** | 16d | 2024-10-10 | 2024-10-31 |  |  |  |  | 36 | 砼工12人，围栏12人，铺砌22人，绿化10人 |
| 151 | 1.10.3.18.10.9.7.1 | 混凝土地坪 | 5d | 2024-10-10 | 2024-10-16 |  | 11d |  | start no earlier than 2024-10-10 | 12 |  |
| 152 | 1.10.3.18.10.9.7.2 | 铁艺围栏 | 7d | 2024-10-11 | 2024-10-21 | 149 | 8d |  | start no earlier than 2024-10-11 | 12 |  |
| 153 | 1.10.3.18.10.9.7.3 | 透水砖地坪及路缘石 | 7d | 2024-10-15 | 2024-10-23 |  | 256d | 0d | start no earlier than 2024-10-15 | 22 |  |
| 154 | 1.10.3.18.10.9.7.4 | 绿化种植草坪 | 5d | 2024-10-24 | 2024-10-30 | 153 | 256d |  |  | 10 |  |
| 155 | 1.10.3.18.10.9.8 | 场地标线等 | 5d | 2024-10-25 | 2024-10-31 |  | 0d |  | start no earlier than 2024-10-25 |  |  |
