# K248+500养护道班房总体进度计划2024.8.19

Schedule from MS Project, 2024-08-05 to 2025-10-10.
Microsoft

## Calendars

- 标准: Mon-Fri 08:00-12:00, 13:00-17:00; Sat-Sun off. Exceptions (off unless hours are given): 2024-08-10 08:00-12:00, 13:00-17:00, 2024-09-14 08:00-12:00, 13:00-17:00, 2025-04-20 08:00-12:00, 13:00-17:00, 2025-05-10 08:00-12:00, 13:00-17:00, 2025-05-17 08:00-12:00, 13:00-17:00, 2025-05-24 to 2025-05-25 08:00-12:00, 13:00-17:00, 2025-06-01 08:00-12:00, 13:00-17:00.

## Schedule

| ID | WBS | Task | Type | Duration | Start | Finish | Predecessors | Total slack | Free slack | Constraint | Deadline | [劳动力配置 |
| --- | --- | --- | --- | --- | --- | --- | --- | --- | --- | --- | --- | --- |
| 1 | 1 | **K248+500养护道班房项目** |  | 318d? | 2024-08-05 | 2025-10-10 |  | -30d | 0d |  | 2025-10-15 | 164 |
| 2 | 1.1 | 项目开工 |  | 5d | 2024-08-05 | 2024-08-09 |  | 250d | 0d | start no earlier than 2024-08-05 |  | 13 |
| 3 | 1.2 | 正负零封顶 |  | 25d | 2024-08-19 | 2024-09-19 | 2 | 285d |  | finish no earlier than 2024-09-19 |  | 22 |
| 4 | 1.3 | 主体结构封顶 |  | 207d | 2024-09-19 | 2025-06-26 |  | 79d |  | finish no earlier than 2025-06-26 |  | 35 |
| 5 | 1.4 | 冬休 | inactive | 130d | 2024-10-22 | 2025-04-20 |  | -218d | 0d | finish no earlier than 2025-04-20 |  |  |
| 6 | 1.5 | 二次结构、装饰装修 |  | 40d | 2025-04-30 | 2025-06-17 |  | 58d | 0d | finish no earlier than 2025-06-17 |  | 30 |
| 7 | 1.6 | 室内给排水 |  | 43d | 2025-05-12 | 2025-07-03 |  | 74d |  | finish no earlier than 2025-07-03 |  | 12 |
| 8 | 1.7 | 电气设备安装 |  | 16d | 2025-06-10 | 2025-07-01 |  | 76d |  | finish no earlier than 2025-07-01 |  |  |
| 9 | 1.8 | 采暖、消防、通风 |  | 36d | 2025-05-20 | 2025-07-03 |  | 74d |  | finish no earlier than 2025-07-03 |  | 11 |
| 10 | 1.9 | 屋面及防排水、外墙及隔热保温 |  | 39d | 2025-05-25 | 2025-07-15 |  | 66d |  | finish no earlier than 2025-07-15 |  |  |
| 11 | 1.10 | 室外工程 |  | 57d | 2025-06-01 | 2025-08-18 |  | 3d | 0d | finish no earlier than 2025-08-18 |  | 26 |
| 12 | 1.11 | 竣工验收 |  | 24d | 2025-08-19 | 2025-09-19 | 11 | 3d | 0d | finish no earlier than 2025-09-19 |  |  |
| 13 | 1.12 | 交付使用 |  | 15d | 2025-09-22 | 2025-10-10 | 12 | 3d |  | finish no earlier than 2025-10-10 |  |  |
| 14 | 1.13 | **单位单项工程施工计划** |  | 315d? | 2024-08-08 | 2025-10-10 |  | -33d | 0d |  |  | 164 |
| 15 | 1.13.1 | **土方开挖** |  | 17d | 2024-08-08 | 2024-08-29 |  | 4d |  |  |  |  |
| 16 | 1.13.1.1 | 1#综合楼 |  | 9d | 2024-08-08 | 2024-08-19 |  | 4d |  | start no earlier than 2024-08-08 |  |  |
| 17 | 1.13.1.2 | 2#机械库 |  | 3d | 2024-08-23 | 2024-08-27 |  | 274d | 0d | finish no earlier than 2024-08-27 |  |  |
| 18 | 1.13.1.3 | 3#设备用房 |  | 3d | 2024-08-26 | 2024-08-28 |  | 302d |  | finish no earlier than 2024-08-28 |  |  |
| 19 | 1.13.1.4 | 4#垃圾中转站 |  | 2d | 2024-08-28 | 2024-08-29 | 17 | 274d | 0d |  |  |  |
| 20 | 1.13.2 | 边坡支护 |  | 16d | 2024-08-09 | 2024-08-29 |  | 301d |  | finish no earlier than 2024-08-29 |  |  |
| 21 | 1.13.3 | **1#综合楼** |  | 251d? | 2024-08-19 | 2025-07-24 |  |  |  |  |  |  |
| 22 | 1.13.3.1 | **地基与基础** |  | 15d | 2024-08-19 | 2024-09-06 |  | 270d |  |  |  |  |
| 23 | 1.13.3.1.1 | 基底整平 |  | 2d | 2024-08-19 | 2024-08-20 |  | 271d | 0d | finish no earlier than 2019-12-04 |  |  |
| 24 | 1.13.3.1.2 | 基础垫层 |  | 3d | 2024-08-21 | 2024-08-23 | 23 | 271d | 1d | start no earlier than 2019-12-05 |  |  |
| 25 | 1.13.3.1.3 | 独立基础 |  | 4d | 2024-08-27 | 2024-08-30 | 24 | 270d | 0d | start no earlier than 2024-08-27 |  |  |
| 26 | 1.13.3.1.4 | 基础梁柱 |  | 5d | 2024-09-02 | 2024-09-06 | 25 | 270d | 0d |  |  |  |
| 27 | 1.13.3.2 | 回填 |  | 5d | 2024-09-09 | 2024-09-13 | 26 | 255d | 0d | start no earlier than 2020-02-05 |  |  |

Notes:
- 5: 根据当地地理和气候环境影响，当年10月至次年4月间为冬休停工期。冬休期间准备次年装饰装修材料。

| ID | WBS | Task | Duration | Start | Finish | Predecessors | Total slack | Free slack | Constraint |
| --- | --- | --- | --- | --- | --- | --- | --- | --- | --- |
| 28 | 1.13.3.3 | **主体结构** | 171d | 2024-09-14 | 2025-05-08 |  | 119d |  |  |
| 29 | 1.13.3.3.1 | 一层梁板柱 | 10d | 2024-09-14 | 2024-09-26 | 27 | 255d | 0d | start no earlier than 2024-09-14 |
| 30 | 1.13.3.3.2 | 二层梁板柱 | 10d | 2024-09-27 | 2024-10-10 | 29 | 255d | 0d |  |
| 31 | 1.13.3.3.3 | 屋面层 | 15d | 2025-04-20 | 2025-05-08 | 5 | 119d |  | start no earlier than 2025-04-20 |
| 32 | 1.13.3.4 | **二次结构及装饰装修** | 31d | 2025-04-30 | 2025-06-04 |  |  |  |  |
| 33 | 1.13.3.4.1 | 一层 | 30d | 2025-04-30 | 2025-06-03 | 5 | 86d | 0d | start no earlier than 2025-04-30 |
| 34 | 1.13.3.4.2 | 二层 | 30d | 2025-04-30 | 2025-06-03 |  | 93d |  | start no earlier than 2025-04-30 |
| 35 | 1.13.3.5 | **给排水及采暖工程** | 19d | 2025-05-12 | 2025-06-01 |  | 27d |  |  |
| 36 | 1.13.3.5.1 | 套管预留预埋 | 5d | 2025-05-12 | 2025-05-16 | 5 | 27d | 0d | start no earlier than 2025-05-12 |
| 37 | 1.13.3.5.2 | 一层管道安装 | 3d | 2025-05-17 | 2025-05-20 | 36 | 27d | 0d | start no earlier than 2025-05-17 |
| 38 | 1.13.3.5.3 | 二层管道安装 | 3d | 2025-05-21 | 2025-05-23 | 37 | 27d | 0d |  |
| 39 | 1.13.3.5.4 | 一层地辐热管道、分集水器安装 | 3d | 2025-05-24 | 2025-05-26 | 38 | 27d | 0d | start no earlier than 2025-05-24 |
| 40 | 1.13.3.5.5 | 二层地辐热管道、分集水器安装 | 3d | 2025-05-27 | 2025-05-29 | 39 | 27d | 0d |  |
| 41 | 1.13.3.5.6 | 给水打压、闭水试验 | 2d | 2025-05-30 | 2025-06-01 | 40 | 27d | 1d |  |
| 42 | 1.13.3.6 | **建筑电气及设备安装** | 23d | 2025-06-10 | 2025-07-10 |  | 21d |  |  |
| 43 | 1.13.3.6.1 | 防雷接地焊接 | 3d | 2025-06-10 | 2025-06-12 | 41 | 21d | 0d | start no earlier than 2025-06-10 |
| 44 | 1.13.3.6.2 | 一层主体配管线 | 5d | 2025-06-13 | 2025-06-19 | 43 | 69d | 0d |  |
| 45 | 1.13.3.6.3 | 二层主体配管线 | 5d | 2025-06-20 | 2025-06-26 | 44 | 69d | 0d |  |
| 46 | 1.13.3.6.4 | 一层电气设备照明安装调试 | 5d | 2025-06-27 | 2025-07-03 | 45 | 69d | 0d |  |
| 47 | 1.13.3.6.5 | 二层电气设备照明安装调试 | 5d | 2025-07-04 | 2025-07-10 | 46 | 69d |  |  |
| 48 | 1.13.3.7 | **通风、消防与空调工程** | 36d | 2025-05-20 | 2025-07-03 |  |  |  |  |
| 49 | 1.13.3.7.1 | 风管、消防管件制作安装 | 10d | 2025-05-20 | 2025-05-29 |  | 84d | 0d | start no earlier than 2025-05-20 |
| 50 | 1.13.3.7.2 | 管、阀安装 | 5d | 2025-05-30 | 2025-06-04 | 49 | 84d | 0d |  |
| 51 | 1.13.3.7.3 | 管阀调试及启闭试验 | 3d | 2025-06-05 | 2025-06-09 | 50 | 84d | 0d | start no earlier than 2020-03-16 |
| 52 | 1.13.3.7.4 | 机组设备安装 | 5d | 2025-06-10 | 2025-06-16 | 51 | 84d |  | start no earlier than 2020-03-19 |
| 53 | 1.13.3.8 | 屋面和外墙 | 21d | 2025-05-25 | 2025-06-19 |  | 16d | 0d | start no earlier than 2025-05-25 |
| 54 | 1.13.3.9 | 其他设备安装调试 | 10d | 2025-06-20 | 2025-07-03 | 53 | 71d |  | finish no earlier than 2020-06-15 |

| ID | WBS | Task | Duration | Start | Finish | Predecessors | Total slack | Free slack | Constraint |
| --- | --- | --- | --- | --- | --- | --- | --- | --- | --- |
| 55 | 1.13.3.10 | **2#机械库** | 234d | 2024-08-28 | 2025-07-10 |  |  |  |  |
| 56 | 1.13.3.10.1 | **地基与基础** | 12d | 2024-08-28 | 2024-09-12 |  | 274d |  |  |
| 57 | 1.13.3.10.1.1 | 基底整平 | 1d | 2024-08-28 | 2024-08-28 |  | 253d | 0d | start no earlier than 2024-08-28 |
| 58 | 1.13.3.10.1.2 | 基础垫层 | 2d | 2024-08-29 | 2024-08-30 | 57 | 253d | 0d | start no earlier than 2019-12-05 |
| 59 | 1.13.3.10.1.3 | 独立基础 | 4d | 2024-09-02 | 2024-09-05 | 58 | 253d | 0d | start no earlier than 2024-08-27 |
| 60 | 1.13.3.10.1.4 | 基础梁柱 | 5d | 2024-09-06 | 2024-09-12 | 59 | 253d | 0d |  |
| 61 | 1.13.3.10.2 | 回填 | 2d | 2024-09-13 | 2024-09-14 | 60 | 253d | 0d | start no earlier than 2020-02-05 |
| 62 | 1.13.3.11 | **主体结构** | 19d | 2024-09-10 | 2024-10-03 |  |  |  |  |
| 63 | 1.13.3.11.1 | 一层梁板柱 | 8d | 2024-09-10 | 2024-09-18 |  | 275d | 0d | start no earlier than 2024-09-10 |
| 64 | 1.13.3.11.2 | 屋面层 | 11d | 2024-09-19 | 2024-10-03 | 63 | 275d |  |  |
| 65 | 1.13.3.12 | **二次结构及装饰装修** | 16d | 2025-05-01 | 2025-05-20 |  |  |  |  |
| 66 | 1.13.3.12.1 | 一层 | 15d | 2025-05-01 | 2025-05-19 | 5 | -226d | 0d | start no earlier than 2025-05-01 |
| 67 | 1.13.3.13 | **给排水及采暖工程** | 8d | 2025-05-20 | 2025-05-27 |  | -226d | 0d |  |
| 68 | 1.13.3.13.1 | 套管预留预埋 | 5d | 2025-05-20 | 2025-05-24 | 5, 66 | -226d | 0d | start no earlier than 2019-12-06 |
| 69 | 1.13.3.13.2 | 一层管道安装 | 3d | 2025-05-25 | 2025-05-27 | 68 | -226d | 0d |  |
| 70 | 1.13.3.14 | **建筑电气及设备安装** | 10d | 2025-06-10 | 2025-06-23 |  | -236d | 0d |  |
| 71 | 1.13.3.14.1 | 防雷接地焊接 | 3d | 2025-06-10 | 2025-06-12 | 69 | -236d | 0d | start no earlier than 2025-06-10 |
| 72 | 1.13.3.14.2 | 一层主体配管线 | 3d | 2025-06-13 | 2025-06-17 | 71 | 82d | 0d |  |
| 73 | 1.13.3.14.3 | 一层电气设备照明安装调试 | 4d | 2025-06-18 | 2025-06-23 | 72 | 82d |  |  |
| 74 | 1.13.3.15 | **通风、消防与空调工程** | 20d | 2025-05-20 | 2025-06-11 |  | 77d |  |  |
| 75 | 1.13.3.15.1 | 风管、消防管件制作安装 | 10d | 2025-05-20 | 2025-05-29 |  | 77d | 0d | start no earlier than 2025-05-20 |
| 76 | 1.13.3.15.2 | 管、阀安装 | 5d | 2025-05-30 | 2025-06-04 | 75 | 90d | 0d |  |
| 77 | 1.13.3.15.3 | 机组设备安装 | 5d | 2025-06-05 | 2025-06-11 | 76 | 90d |  | start no earlier than 2020-03-19 |
| 78 | 1.13.3.16 | 屋面和外墙 | 10d | 2025-06-13 | 2025-06-26 | 71 | -236d | 0d | start no earlier than 2020-02-11 |
| 79 | 1.13.3.17 | 其他设备安装调试 | 10d | 2025-06-27 | 2025-07-10 | 78 | -236d | 0d | finish no earlier than 2020-06-15 |

| ID | WBS | Task | Duration | Start | Finish | Predecessors | Total slack | Free slack | Constraint |
| --- | --- | --- | --- | --- | --- | --- | --- | --- | --- |
| 80 | 1.13.3.18 | **3#设备用房** | 250d? | 2024-08-25 | 2025-07-29 | 79 |  |  |  |
| 81 | 1.13.3.18.1 | **地基与基础** | 15d | 2024-08-25 | 2024-09-13 |  | 0d |  |  |
| 82 | 1.13.3.18.1.1 | 取水井 | 2d | 2024-08-25 | 2024-08-27 | 16 | 0d |  | must start on 2024-08-25 |
| 83 | 1.13.3.18.1.2 | 基底整平 | 1d | 2024-08-29 | 2024-08-29 |  | 277d | 0d | start no earlier than 2024-08-29 |
| 84 | 1.13.3.18.1.3 | 基础垫层 | 2d | 2024-08-30 | 2024-09-02 | 83 | 277d | 0d | start no earlier than 2019-12-05 |
| 85 | 1.13.3.18.1.4 | 独立基础 | 4d | 2024-09-03 | 2024-09-06 | 84 | 277d | 0d | start no earlier than 2024-08-27 |
| 86 | 1.13.3.18.1.5 | 基础梁柱 | 5d | 2024-09-09 | 2024-09-13 | 85 | 277d | 0d |  |
| 87 | 1.13.3.18.2 | 回填 | 5d | 2024-09-14 | 2024-09-19 | 86 | 277d | 12d | start no earlier than 2020-02-05 |
| 88 | 1.13.3.18.3 | **主体结构** | 209d | 2024-09-20 | 2025-07-01 |  | 76d |  |  |
| 89 | 1.13.3.18.3.1 | 负一层（消防水池） | 12d | 2024-09-20 | 2024-10-07 |  | 265d | 0d | start no earlier than 2024-09-20 |
| 90 | 1.13.3.18.3.2 | 一层梁板柱 | 8d | 2024-10-08 | 2024-10-17 | 87, 61, 89 | 265d |  | start no earlier than 2024-09-15 |
| 91 | 1.13.3.18.3.3 | 屋面层 | 10d | 2025-06-18 | 2025-07-01 | 6 | 58d | 0d | start no earlier than 2025-04-20 |
| 92 | 1.13.3.18.4 | **二次结构及装饰装修** | 15d | 2025-05-10 | 2025-05-26 |  |  |  |  |
| 93 | 1.13.3.18.4.1 | 一层 | 15d | 2025-07-02 | 2025-07-22 | 5, 91 | 58d |  | start no earlier than 2025-05-10 |
| 94 | 1.13.3.18.5 | **给排水及采暖工程** | 31d | 2025-05-25 | 2025-07-03 |  | 74d |  |  |
| 95 | 1.13.3.18.5.1 | 套管预留预埋 | 5d | 2025-05-25 | 2025-05-29 | 5, 68 | 74d | 0d | start no earlier than 2019-12-06 |
| 96 | 1.13.3.18.5.2 | 负一层管道安装 | 5d | 2025-05-30 | 2025-06-04 | 95 | 74d | 0d |  |
| 97 | 1.13.3.18.5.3 | 一层管道安装 | 5d | 2025-06-05 | 2025-06-11 | 96 | 74d | 0d |  |
| 98 | 1.13.3.18.5.4 | 一层泵房设备安装 | 7d | 2025-06-12 | 2025-06-20 | 97 | 74d | 0d |  |
| 99 | 1.13.3.18.5.5 | 一层设备房、分集水器安装 | 7d | 2025-06-23 | 2025-07-01 | 98 | 74d | 0d |  |
| 100 | 1.13.3.18.5.6 | 给水打压、闭水试验 | 2d | 2025-07-02 | 2025-07-03 | 99 | 74d |  |  |
| 101 | 1.13.3.18.6 | **建筑电气及设备安装** | 13d | 2025-06-13 | 2025-07-01 |  | 53d |  |  |
| 102 | 1.13.3.18.6.1 | 防雷接地焊接 | 3d | 2025-06-13 | 2025-06-17 | 71 | 53d | 0d | finish no earlier than 2020-01-31 |
| 103 | 1.13.3.18.6.2 | 一层主体配管线 | 5d | 2025-06-18 | 2025-06-24 | 102 | 76d | 0d |  |
| 104 | 1.13.3.18.6.3 | 一层电气设备照明安装调试 | 5d | 2025-06-25 | 2025-07-01 | 103 | 76d |  |  |

| ID | WBS | Task | Duration | Start | Finish | Predecessors | Total slack | Free slack | Constraint |
| --- | --- | --- | --- | --- | --- | --- | --- | --- | --- |
| 105 | 1.13.3.18.7 | **通风、消防与空调工程** | 23d | 2025-05-30 | 2025-06-30 |  | 77d |  |  |
| 106 | 1.13.3.18.7.1 | 风管、消防管件制作安装 | 10d | 2025-05-30 | 2025-06-11 | 75 | 77d | 0d | finish no earlier than 2020-03-15 |
| 107 | 1.13.3.18.7.2 | 管、阀安装 | 5d | 2025-06-12 | 2025-06-18 | 106 | 77d | 0d |  |
| 108 | 1.13.3.18.7.3 | 管阀调试及启闭试验 | 3d | 2025-06-19 | 2025-06-23 | 107 | 77d | 0d | start no earlier than 2020-03-16 |
| 109 | 1.13.3.18.7.4 | 机组设备安装 | 5d | 2025-06-24 | 2025-06-30 | 108 | 77d |  | start no earlier than 2020-03-19 |
| 110 | 1.13.3.18.8 | 屋面和外墙 | 20d | 2025-06-18 | 2025-07-15 | 102 | 53d | 0d | start no earlier than 2020-02-11 |
| 111 | 1.13.3.18.9 | 其他设备安装调试 | 10d | 2025-07-16 | 2025-07-29 | 110 | 53d |  | finish no earlier than 2020-06-15 |
| 112 | 1.13.3.18.10 | **4#垃圾中转站** | 224d? | 2024-08-30 | 2025-06-30 |  |  |  |  |
| 113 | 1.13.3.18.10.1 | **地基与基础** | 10d | 2024-08-30 | 2024-09-12 |  | 274d |  |  |
| 114 | 1.13.3.18.10.1.1 | 基底整平 | 1d | 2024-08-30 | 2024-08-30 | 19 | 274d | 0d | finish no earlier than 2019-12-04 |
| 115 | 1.13.3.18.10.1.2 | 基础垫层 | 1d | 2024-09-02 | 2024-09-02 | 114 | 274d | 0d | start no earlier than 2019-12-05 |
| 116 | 1.13.3.18.10.1.3 | 独立基础 | 3d | 2024-09-03 | 2024-09-05 | 115 | 274d | 0d | start no earlier than 2024-08-27 |
| 117 | 1.13.3.18.10.1.4 | 基础梁柱 | 5d | 2024-09-06 | 2024-09-12 | 116 | 274d | 0d |  |
| 118 | 1.13.3.18.10.2 | 回填 | 2d | 2024-09-13 | 2024-09-14 | 117 | 274d | 0d | start no earlier than 2020-02-05 |
| 119 | 1.13.3.18.10.3 | **主体结构** | 15d | 2024-09-16 | 2024-10-04 |  | 274d |  |  |
| 120 | 1.13.3.18.10.3.1 | 一层梁板柱 | 6d | 2024-09-16 | 2024-09-23 | 118, 61 | 274d | 0d |  |
| 121 | 1.13.3.18.10.3.2 | 屋面层 | 9d | 2024-09-24 | 2024-10-04 | 120 | 274d |  |  |
| 122 | 1.13.3.18.10.4 | **二次结构及装饰装修** | 10d | 2025-06-04 | 2025-06-17 |  | 86d |  |  |
| 123 | 1.13.3.18.10.4.1 | 一层 | 10d | 2025-06-04 | 2025-06-17 | 5, 33 | 86d |  | start no earlier than 2025-05-10 |
| 124 | 1.13.3.18.10.5 | **给排水及采暖工程** | 5d | 2025-05-17 | 2025-05-22 |  | 107d |  |  |
| 125 | 1.13.3.18.10.5.1 | 套管预留预埋 | 3d | 2025-05-17 | 2025-05-20 | 5, 36 | 107d | 0d | start no earlier than 2019-12-06 |
| 126 | 1.13.3.18.10.5.2 | 一层管道安装 | 2d | 2025-05-21 | 2025-05-22 | 125 | 107d |  |  |
| 127 | 1.13.3.18.10.6 | **建筑电气及设备安装** | 5d | 2025-06-13 | 2025-06-19 |  | 74d |  |  |
| 128 | 1.13.3.18.10.6.1 | 防雷接地焊接 | 2d | 2025-06-13 | 2025-06-16 | 5, 43 | 74d | 0d | finish no earlier than 2020-01-31 |
| 129 | 1.13.3.18.10.6.2 | 一层主体配管线 | 3d | 2025-06-17 | 2025-06-19 | 128 | 84d |  |  |
| 130 | 1.13.3.18.10.7 | 屋面和外墙 | 5d | 2025-06-17 | 2025-06-23 | 128 | 74d | 0d | start no earlier than 2020-02-11 |
| 131 | 1.13.3.18.10.8 | 其他设备安装调试 | 5d | 2025-06-24 | 2025-06-30 | 130 | 74d |  | finish no earlier than 2020-06-15 |

| ID | WBS | Task | Duration | Start | Finish | Predecessors | Total slack | Free slack | Constraint |
| --- | --- | --- | --- | --- | --- | --- | --- | --- | --- |
| 132 | 1.13.3.18.10.9 | **室外工程** | 57d | 2025-06-01 | 2025-08-18 |  | 2d |  |  |
| 133 | 1.13.3.18.10.9.1 | 污水处理设备 | 10d | 2025-06-01 | 2025-06-12 |  | 89d |  | start no earlier than 2025-06-01 |
| 134 | 1.13.3.18.10.9.2 | 化粪池 | 5d | 2025-06-01 | 2025-06-05 |  | 94d |  | finish no earlier than 2025-06-05 |
| 135 | 1.13.3.18.10.9.3 | 调节池 | 5d | 2025-06-04 | 2025-06-10 |  | 91d |  | start no earlier than 2025-06-04 |
| 136 | 1.13.3.18.10.9.4 | 污泥池 | 5d | 2025-06-06 | 2025-06-12 |  | 89d |  | start no earlier than 2025-06-06 |
| 137 | 1.13.3.18.10.9.5 | **室外给排水** | 13d | 2025-06-03 | 2025-06-19 |  |  |  |  |
| 138 | 1.13.3.18.10.9.5.1 | 沟槽开挖回填 | 5d | 2025-06-03 | 2025-06-09 | 5, 41 | 84d | 0d | start no earlier than 2025-06-03 |
| 139 | 1.13.3.18.10.9.5.2 | 管线铺设 | 3d | 2025-06-10 | 2025-06-12 | 138 | 84d | 0d |  |
| 140 | 1.13.3.18.10.9.5.3 | 检查井 | 5d | 2025-06-13 | 2025-06-19 | 139 | 84d |  |  |
| 141 | 1.13.3.18.10.9.5.4 | **室外暖通** | 11d | 2025-06-03 | 2025-06-17 |  |  |  |  |
| 142 | 1.13.3.18.10.9.5.4.1 | 沟槽开挖回填 | 5d | 2025-06-03 | 2025-06-09 |  | 83d | 0d | start no earlier than 2025-06-03 |
| 143 | 1.13.3.18.10.9.5.4.2 | 直埋式暖通保温管线铺设 | 3d | 2025-06-10 | 2025-06-12 | 142 | 83d | 0d |  |
| 144 | 1.13.3.18.10.9.5.4.3 | 管阀调试及启闭试验 | 3d | 2025-06-13 | 2025-06-17 | 143 | 83d |  | start no earlier than 2020-03-16 |
| 145 | 1.13.3.18.10.9.5.4.4 | **室外消防** | 13d | 2025-06-06 | 2025-06-24 |  |  |  |  |
| 146 | 1.13.3.18.10.9.5.4.4.1 | 沟槽开挖回填 | 5d | 2025-06-06 | 2025-06-12 |  | 81d | 0d | start no earlier than 2025-06-06 |
| 147 | 1.13.3.18.10.9.5.4.4.2 | 管线铺设 | 3d | 2025-06-13 | 2025-06-17 | 146 | 81d | 0d |  |
| 148 | 1.13.3.18.10.9.5.4.4.3 | 室外消防栓 | 5d | 2025-06-18 | 2025-06-24 | 147 | 81d |  |  |
| 149 | 1.13.3.18.10.9.6 | **室外电气** | 10d | 2025-06-20 | 2025-07-03 |  | 16d |  |  |
| 150 | 1.13.3.18.10.9.6.1 | 沟槽开挖回填 | 2d | 2025-06-20 | 2025-06-23 | 53, 43 | 16d | 0d |  |
| 151 | 1.13.3.18.10.9.6.2 | 砌筑井 | 5d | 2025-06-24 | 2025-06-30 | 150 | 64d | 0d |  |
| 152 | 1.13.3.18.10.9.6.3 | 缆线铺设及室外照明 | 3d | 2025-07-01 | 2025-07-03 | 151 | 64d | 0d |  |
| 153 | 1.13.3.18.10.9.7 | **室外土建** | 32d | 2025-07-04 | 2025-08-18 |  |  |  |  |
| 154 | 1.13.3.18.10.9.7.1 | 混凝土地坪 | 10d | 2025-07-11 | 2025-07-24 | 5, 79, 150 | 3d | 0d | finish no earlier than 2019-12-04 |
| 155 | 1.13.3.18.10.9.7.2 | 铁艺围栏 | 7d | 2025-07-04 | 2025-07-14 | 152 | 64d |  | start no earlier than 2025-06-17 |
| 156 | 1.13.3.18.10.9.7.3 | 透水砖地坪及路缘石 | 7d | 2025-07-25 | 2025-08-04 | 154 | 3d | 0d | start no earlier than 2024-08-27 |
| 157 | 1.13.3.18.10.9.7.4 | 绿化种植草坪 | 5d | 2025-08-05 | 2025-08-11 | 156 | 3d | 0d |  |
| 158 | 1.13.3.18.10.9.8 | 场地标线等 | 5d | 2025-08-12 | 2025-08-18 | 157 | 3d | 0d | start no earlier than 2020-02-05 |

| ID | WBS | Task | Duration | Start | Finish | Predecessors | Total slack | Free slack | Constraint |
| --- | --- | --- | --- | --- | --- | --- | --- | --- | --- |
| 159 | 1.13.4 | **项目验收计划** | 24d | 2025-08-19 | 2025-09-19 |  | 3d |  |  |
| 160 | 1.13.4.1 | 管网验收 | 2d | 2025-08-19 | 2025-08-20 | 158 | 3d | 0d | start no earlier than 2020-03-21 |
| 161 | 1.13.4.2 | 防雷验收 | 2d | 2025-08-21 | 2025-08-22 | 160 | 3d | 0d | start no earlier than 2020-06-01 |
| 162 | 1.13.4.3 | 规划验收 | 2d | 2025-08-25 | 2025-08-26 | 161 | 3d | 0d | start no earlier than 2020-06-03 |
| 163 | 1.13.4.4 | 环保验收 | 2d | 2025-08-27 | 2025-08-28 | 162 | 3d | 0d | start no earlier than 2020-06-05 |
| 164 | 1.13.4.5 | 绿建核查 | 2d | 2025-08-29 | 2025-09-01 | 163 | 3d | 0d | start no earlier than 2020-06-07 |
| 165 | 1.13.4.6 | 节能验收 | 2d | 2025-09-02 | 2025-09-03 | 164 | 3d | 0d |  |
| 166 | 1.13.4.7 | 弱电检测 | 2d | 2025-09-04 | 2025-09-05 | 165 | 3d | 0d | start no earlier than 2020-06-11 |
| 167 | 1.13.4.8 | 电检、消捡 | 2d | 2025-09-08 | 2025-09-09 | 166 | 3d | 0d | start no earlier than 2020-06-13 |
| 168 | 1.13.4.9 | 消防验收 | 3d | 2025-09-10 | 2025-09-12 | 167 | 3d | 0d | start no earlier than 2020-06-15 |
| 169 | 1.13.4.10 | 道路、绿化、照明等四方验收 | 3d | 2025-09-15 | 2025-09-17 | 168 | 3d | 0d | start no earlier than 2020-06-15 |
| 170 | 1.13.4.11 | 四方验收 | 2d | 2025-09-18 | 2025-09-19 | 169 | 3d | 0d | start no earlier than 2020-06-18 |
| 171 | 1.13.5 | **竣工验收及交付** | 15d | 2025-09-22 | 2025-10-10 |  | 3d |  |  |
| 172 | 1.13.5.1 | 竣工结算 | 2d | 2025-09-22 | 2025-09-23 | 170 | 3d | 0d | start no earlier than 2020-06-20 |
| 173 | 1.13.5.2 | 档案馆资料预验收 | 2d | 2025-09-24 | 2025-09-25 | 172 | 3d | 0d | start no earlier than 2020-06-20 |
| 174 | 1.13.5.3 | 档案馆资料验收 | 2d | 2025-09-26 | 2025-09-29 | 173 | 3d | 0d | start no earlier than 2020-06-20 |
| 175 | 1.13.5.4 | 办理《房屋建筑工程竣工验收备案单》 | 2d | 2025-09-30 | 2025-10-01 | 174 | 3d | 0d |  |
| 176 | 1.13.5.5 | 办理综合验收备案证明 | 2d | 2025-10-02 | 2025-10-03 | 175 | 3d | 0d |  |
| 177 | 1.13.5.6 | 竣工移交 | 5d | 2025-10-06 | 2025-10-10 | 176 | 3d |  |  |
