# K284+800养护道班房总体进度计划2024.8.19

Schedule from MS Project, 2024-07-20 to 2025-10-14.
Microsoft

## Calendars

- 标准: Mon-Fri 08:00-12:00, 13:00-17:00; Sat-Sun off. Exceptions (off unless hours are given): 2024-07-20 08:00-12:00, 13:00-17:00, 2024-08-10 08:00-12:00, 13:00-17:00, 2024-08-25 08:00-12:00, 13:00-17:00, 2024-09-01 08:00-12:00, 13:00-17:00, 2024-09-14 08:00-12:00, 13:00-17:00, 2025-04-20 08:00-12:00, 13:00-17:00, 2025-05-10 08:00-12:00, 13:00-17:00, 2025-05-17 08:00-12:00, 13:00-17:00, 2025-05-24 to 2025-05-25 08:00-12:00, 13:00-17:00, 2025-06-01 08:00-12:00, 13:00-17:00, 2025-06-21 08:00-12:00, 13:00-17:00, 2025-07-12 08:00-12:00, 13:00-17:00, 2025-07-19 08:00-12:00, 13:00-17:00.

## Schedule

| ID | WBS | Task | Type | Duration | Start | Finish | Predecessors | Total slack | Free slack | Constraint | Deadline | [劳动力配置 |
| --- | --- | --- | --- | --- | --- | --- | --- | --- | --- | --- | --- | --- |
| 1 | 1 | **K284+800养护道班房项目** |  | 329d? | 2024-07-20 | 2025-10-03 |  |  |  |  | 2025-10-15 | 161 |
| 2 | 1.1 | 项目开工 |  | 17d | 2024-07-20 | 2024-08-10 |  | 320d |  | finish no earlier than 2024-08-10 |  |  |
| 3 | 1.2 | 正负零封顶 |  | 207d | 2024-08-13 | 2025-05-20 |  | 112d |  | finish no earlier than 2025-05-20 |  | 15 |
| 4 | 1.3 | 主体结构封顶 |  | 201d | 2024-09-16 | 2025-06-13 |  | 90d |  | finish no earlier than 2025-06-13 |  | 25 |
| 5 | 1.4 | 冬休 | inactive | 130d | 2024-10-22 | 2025-04-20 |  | 46d | 10d | finish no earlier than 2025-04-20 |  |  |
| 6 | 1.5 | 二次结构、装饰装修 |  | 48d | 2025-05-05 | 2025-07-01 |  | 77d |  | start no earlier than 2025-05-05 |  | 30 |
| 7 | 1.6 | 室内给排水 |  | 33d | 2025-05-21 | 2025-06-30 | 3 | 68d | 0d |  |  |  |
| 8 | 1.7 | 电气设备安装 |  | 40d | 2025-06-12 | 2025-08-01 |  | 52d |  | finish no earlier than 2025-08-01 |  | 12 |
| 9 | 1.8 | 采暖、消防、通风 |  | 49d | 2025-05-21 | 2025-07-19 |  | 62d |  | finish no earlier than 2025-07-19 |  | 15 |
| 10 | 1.9 | 屋面及防排水、外墙及隔热保温 |  | 42d | 2025-05-22 | 2025-07-12 |  | 68d |  | finish no earlier than 2025-07-12 |  | 20 |
| 11 | 1.10 | 室外工程 |  | 39d | 2025-07-01 | 2025-08-20 |  | 9d | 0d | finish no earlier than 2025-08-20 |  | 30 |
| 12 | 1.11 | 竣工验收 |  | 22d | 2025-08-21 | 2025-09-19 | 11 | 9d | 2d | start no earlier than 2025-08-21 |  |  |
| 13 | 1.12 | 交付使用 |  | 8d | 2025-09-24 | 2025-10-03 | 12 | 7d |  | finish no earlier than 2025-10-03 |  |  |
| 14 | 1.13 | **单位单项工程施工计划** |  | 327d? | 2024-07-20 | 2025-10-01 |  |  |  |  |  | 161 |
| 15 | 1.13.1 | **土方开挖** |  | 213d | 2024-07-20 | 2025-05-06 |  |  |  |  |  |  |
| 16 | 1.13.1.1 | 1#综合楼 |  | 30d | 2024-07-20 | 2024-08-27 |  | 306d |  | start no earlier than 2024-07-20 |  |  |
| 17 | 1.13.1.2 | 2#机械库 |  | 5d | 2025-04-30 | 2025-05-06 |  | -238d | 0d | start no earlier than 2025-04-30 |  |  |
| 18 | 1.13.1.3 | 3#设备用房 |  | 5d | 2024-09-01 | 2024-09-05 |  | 280d | 0d | start no earlier than 2024-09-01 |  |  |
| 19 | 1.13.1.4 | 4#垃圾中转站 |  | 27d | 2024-07-22 | 2024-08-25 |  | 282d | 4d | finish no earlier than 2024-08-25 |  |  |
| 20 | 1.13.2 | 边坡支护 |  | 193d | 2024-08-15 | 2025-05-06 |  | 123d |  | finish no earlier than 2025-05-06 |  |  |
| 21 | 1.13.3 | **1#综合楼** |  | 256d? | 2024-08-25 | 2025-07-31 |  |  |  |  |  |  |
| 22 | 1.13.3.1 | **地基与基础** |  | 15d | 2024-08-25 | 2024-09-11 |  | 280d |  |  |  |  |
| 23 | 1.13.3.1.1 | 基底整平 |  | 3d | 2024-08-25 | 2024-08-27 |  | 280d | 0d | start no earlier than 2024-08-25 |  |  |
| 24 | 1.13.3.1.2 | 基础垫层 |  | 3d | 2024-08-28 | 2024-08-30 | 23 | 280d | 0d | start no earlier than 2019-12-05 |  |  |
| 25 | 1.13.3.1.3 | 独立基础 |  | 4d | 2024-09-01 | 2024-09-04 | 24 | 280d | 0d | start no earlier than 2024-08-27 |  |  |
| 26 | 1.13.3.1.4 | 基础梁柱 |  | 5d | 2024-09-05 | 2024-09-11 | 25 | 280d | 0d |  |  |  |
| 27 | 1.13.3.2 | 回填 |  | 5d | 2024-09-12 | 2024-09-17 | 26 | 280d | 0d | start no earlier than 2020-02-05 |  |  |

Notes:
- 5: 根据当地地理和气候环境影响，当年10月至次年4月间为冬休停工期。冬休期间准备次年装饰装修材料。

| ID | WBS | Task | Duration | Start | Finish | Predecessors | Total slack | Free slack | Constraint |
| --- | --- | --- | --- | --- | --- | --- | --- | --- | --- |
| 28 | 1.13.3.3 | **主体结构** | 178d | 2024-09-18 | 2025-05-20 |  | 112d |  |  |
| 29 | 1.13.3.3.1 | 一层梁板柱 | 10d | 2024-09-18 | 2024-10-01 | 27 | 280d |  | start no earlier than 2024-09-14 |
| 30 | 1.13.3.3.2 | 二层梁板柱 | 10d | 2025-04-20 | 2025-05-01 |  | 22d | 0d | start no earlier than 2025-04-20 |
| 31 | 1.13.3.3.3 | 屋面层 | 15d | 2025-05-02 | 2025-05-20 | 30 | 22d | 0d | start no earlier than 2025-05-02 |
| 32 | 1.13.3.4 | **二次结构及装饰装修** | 45d | 2025-05-05 | 2025-06-26 |  |  |  |  |
| 33 | 1.13.3.4.1 | 一层 | 30d | 2025-05-05 | 2025-06-06 | 5 | 95d |  | start no earlier than 2025-05-05 |
| 34 | 1.13.3.4.2 | 二层 | 30d | 2025-05-21 | 2025-06-25 |  | 81d |  | start no earlier than 2025-05-21 |
| 35 | 1.13.3.5 | **给排水及采暖工程** | 19d | 2025-05-21 | 2025-06-11 |  | 22d |  |  |
| 36 | 1.13.3.5.1 | 套管预留预埋 | 5d | 2025-05-21 | 2025-05-25 | 5, 31 | 22d | 0d | start no earlier than 2025-05-12 |
| 37 | 1.13.3.5.2 | 一层管道安装 | 3d | 2025-05-26 | 2025-05-28 | 36 | 22d | 0d | start no earlier than 2025-05-17 |
| 38 | 1.13.3.5.3 | 二层管道安装 | 3d | 2025-05-29 | 2025-06-01 | 37 | 22d | 0d |  |
| 39 | 1.13.3.5.4 | 一层地辐热管道、分集水器安装 | 3d | 2025-06-02 | 2025-06-04 | 38 | 22d | 0d | start no earlier than 2025-05-24 |
| 40 | 1.13.3.5.5 | 二层地辐热管道、分集水器安装 | 3d | 2025-06-05 | 2025-06-09 | 39 | 22d | 0d |  |
| 41 | 1.13.3.5.6 | 给水打压、闭水试验 | 2d | 2025-06-10 | 2025-06-11 | 40 | 22d | 0d |  |
| 42 | 1.13.3.6 | **建筑电气及设备安装** | 23d | 2025-06-12 | 2025-07-11 |  | 22d |  |  |
| 43 | 1.13.3.6.1 | 防雷接地焊接 | 3d | 2025-06-12 | 2025-06-16 | 41 | 22d | 0d | start no earlier than 2025-06-10 |
| 44 | 1.13.3.6.2 | 一层主体配管线 | 5d | 2025-06-17 | 2025-06-21 | 43 | 70d | 0d |  |
| 45 | 1.13.3.6.3 | 二层主体配管线 | 5d | 2025-06-23 | 2025-06-27 | 44 | 70d | 0d |  |
| 46 | 1.13.3.6.4 | 一层电气设备照明安装调试 | 5d | 2025-06-30 | 2025-07-04 | 45 | 70d | 0d |  |
| 47 | 1.13.3.6.5 | 二层电气设备照明安装调试 | 5d | 2025-07-07 | 2025-07-11 | 46 | 70d |  |  |
| 48 | 1.13.3.7 | **通风、消防与空调工程** | 37d | 2025-05-21 | 2025-07-04 |  |  |  |  |
| 49 | 1.13.3.7.1 | 风管、消防管件制作安装 | 10d | 2025-05-21 | 2025-05-30 | 5, 31 | 88d | 0d | start no earlier than 2025-05-20 |
| 50 | 1.13.3.7.2 | 管、阀安装 | 5d | 2025-06-01 | 2025-06-05 | 49 | 88d | 0d |  |
| 51 | 1.13.3.7.3 | 管阀调试及启闭试验 | 3d | 2025-06-06 | 2025-06-10 | 50 | 88d | 0d | start no earlier than 2020-03-16 |
| 52 | 1.13.3.7.4 | 机组设备安装 | 5d | 2025-06-11 | 2025-06-17 | 51 | 88d |  | start no earlier than 2020-03-19 |
| 53 | 1.13.3.8 | 屋面和外墙 | 21d | 2025-05-25 | 2025-06-19 |  | 19d | 0d | start no earlier than 2025-05-25 |
| 54 | 1.13.3.9 | 其他设备安装调试 | 10d | 2025-06-20 | 2025-07-02 | 53 | 76d |  | finish no earlier than 2020-06-15 |

| ID | WBS | Task | Duration | Start | Finish | Predecessors | Total slack | Free slack | Constraint |
| --- | --- | --- | --- | --- | --- | --- | --- | --- | --- |
| 55 | 1.13.3.10 | **2#机械库** | 57d | 2025-05-07 | 2025-07-15 |  |  |  |  |
| 56 | 1.13.3.10.1 | **地基与基础** | 14d | 2025-05-07 | 2025-05-22 |  |  |  |  |
| 57 | 1.13.3.10.1.1 | 基底整平 | 1d | 2025-05-07 | 2025-05-07 | 17 | -238d | 0d | start no earlier than 2024-08-28 |
| 58 | 1.13.3.10.1.2 | 基础垫层 | 2d | 2025-05-08 | 2025-05-09 | 57 | -238d | 0d | start no earlier than 2019-12-05 |
| 59 | 1.13.3.10.1.3 | 独立基础 | 4d | 2025-05-10 | 2025-05-14 | 58 | -238d | 0d | start no earlier than 2024-08-27 |
| 60 | 1.13.3.10.1.4 | 基础梁柱 | 5d | 2025-05-15 | 2025-05-20 | 59 | -238d | 0d |  |
| 61 | 1.13.3.10.2 | 回填 | 2d | 2025-05-21 | 2025-05-22 | 60 | -238d | 0d | start no earlier than 2020-02-05 |
| 62 | 1.13.3.11 | **主体结构** | 19d | 2024-09-10 | 2024-10-03 |  |  |  |  |
| 63 | 1.13.3.11.1 | 一层梁板柱 | 8d | 2025-05-23 | 2025-05-30 | 61 | -238d | 0d | start no earlier than 2024-09-10 |
| 64 | 1.13.3.11.2 | 屋面层 | 11d | 2025-06-01 | 2025-06-13 | 63 | -238d | 0d |  |
| 65 | 1.13.3.12 | **二次结构及装饰装修** | 13d | 2025-06-16 | 2025-07-01 |  |  |  |  |
| 66 | 1.13.3.12.1 | 一层 | 12d | 2025-06-16 | 2025-06-30 | 64 | 55d | 0d | start no earlier than 2025-05-01 |
| 67 | 1.13.3.13 | **给排水及采暖工程** | 8d | 2025-07-01 | 2025-07-10 |  | 55d |  |  |
| 68 | 1.13.3.13.1 | 套管预留预埋 | 5d | 2025-07-01 | 2025-07-07 | 5, 66 | 55d | 0d | start no earlier than 2019-12-06 |
| 69 | 1.13.3.13.2 | 一层管道安装 | 3d | 2025-07-08 | 2025-07-10 | 68 | 55d | 1d |  |
| 70 | 1.13.3.14 | **建筑电气及设备安装** | 10d | 2025-07-12 | 2025-07-23 |  | 54d |  |  |
| 71 | 1.13.3.14.1 | 防雷接地焊接 | 3d | 2025-07-12 | 2025-07-15 | 69 | 54d | 0d | start no earlier than 2025-07-12 |
| 72 | 1.13.3.14.2 | 一层主体配管线 | 3d | 2025-07-16 | 2025-07-18 | 71 | 60d | 0d |  |
| 73 | 1.13.3.14.3 | 一层电气设备照明安装调试 | 4d | 2025-07-19 | 2025-07-23 | 72 | 60d |  | start no earlier than 2025-07-19 |
| 74 | 1.13.3.15 | **通风、消防与空调工程** | 14d | 2025-06-16 | 2025-07-02 |  | -238d | 0d |  |
| 75 | 1.13.3.15.1 | 风管、消防管件制作安装 | 5d | 2025-06-16 | 2025-06-20 | 64 | -238d | 0d | start no earlier than 2025-05-20 |
| 76 | 1.13.3.15.2 | 管、阀安装 | 4d | 2025-06-21 | 2025-06-25 | 75 | -238d | 0d | start no earlier than 2025-06-21 |
| 77 | 1.13.3.15.3 | 机组设备安装 | 5d | 2025-06-26 | 2025-07-02 | 76 | -238d | 0d | start no earlier than 2020-03-19 |
| 78 | 1.13.3.16 | 屋面和外墙 | 10d | 2025-07-01 | 2025-07-12 | 66 | 68d |  | start no earlier than 2020-02-11 |
| 79 | 1.13.3.17 | 其他设备安装调试 | 10d | 2025-07-03 | 2025-07-15 | 77 | -238d | 0d | finish no earlier than 2020-06-15 |

| ID | WBS | Task | Duration | Start | Finish | Predecessors | Total slack | Free slack | Constraint |
| --- | --- | --- | --- | --- | --- | --- | --- | --- | --- |
| 80 | 1.13.3.18 | **3#设备用房** | 247d? | 2024-09-06 | 2025-08-04 | 79 |  |  |  |
| 81 | 1.13.3.18.1 | **地基与基础** | 18d | 2024-09-06 | 2024-09-30 |  |  |  |  |
| 82 | 1.13.3.18.1.1 | 基底整平 | 2d | 2024-09-06 | 2024-09-09 | 18 | 280d | 0d | start no earlier than 2024-08-29 |
| 83 | 1.13.3.18.1.2 | 基础垫层 | 2d | 2024-09-10 | 2024-09-11 | 82 | 280d | 0d | start no earlier than 2019-12-05 |
| 84 | 1.13.3.18.1.3 | 独立基础 | 4d | 2024-09-12 | 2024-09-16 | 83 | 280d | 0d | start no earlier than 2024-08-27 |
| 85 | 1.13.3.18.1.4 | 基础梁柱 | 5d | 2024-09-17 | 2024-09-23 | 84 | 280d | 0d |  |
| 86 | 1.13.3.18.2 | 回填 | 5d | 2024-09-24 | 2024-09-30 | 85 | 280d |  | start no earlier than 2020-02-05 |
| 87 | 1.13.3.18.3 | **主体结构** | 30d | 2025-05-01 | 2025-06-04 |  | 60d |  |  |
| 88 | 1.13.3.18.3.1 | 负一层（消防水池） | 12d | 2025-05-01 | 2025-05-15 |  | 60d | 0d | start no earlier than 2025-05-01 |
| 89 | 1.13.3.18.3.2 | 一层梁板柱 | 8d | 2025-05-16 | 2025-05-24 | 88 | 60d | 0d | start no earlier than 2025-05-16 |
| 90 | 1.13.3.18.3.3 | 屋面层 | 10d | 2025-05-25 | 2025-06-04 | 89 | 60d | 0d |  |
| 91 | 1.13.3.18.4 | **二次结构及装饰装修** | 15d | 2025-06-05 | 2025-06-24 |  |  |  |  |
| 92 | 1.13.3.18.4.1 | 一层 | 15d | 2025-06-05 | 2025-06-24 | 5, 90 | 60d | 0d | start no earlier than 2025-05-10 |
| 93 | 1.13.3.18.5 | **给排水及采暖工程** | 31d | 2025-06-25 | 2025-08-04 |  | 52d |  |  |
| 94 | 1.13.3.18.5.1 | 套管预留预埋 | 5d | 2025-06-25 | 2025-07-01 | 5 | 52d | 0d | start no earlier than 2025-06-25 |
| 95 | 1.13.3.18.5.2 | 负一层管道安装 | 5d | 2025-07-02 | 2025-07-08 | 94 | 52d | 0d |  |
| 96 | 1.13.3.18.5.3 | 一层管道安装 | 5d | 2025-07-09 | 2025-07-14 | 95 | 52d | 0d |  |
| 97 | 1.13.3.18.5.4 | 一层泵房设备安装 | 7d | 2025-07-15 | 2025-07-22 | 96 | 52d | 0d |  |
| 98 | 1.13.3.18.5.5 | 一层设备房、分集水器安装 | 7d | 2025-07-23 | 2025-07-31 | 97 | 52d | 0d |  |
| 99 | 1.13.3.18.5.6 | 给水打压、闭水试验 | 2d | 2025-08-01 | 2025-08-04 | 98 | 52d |  |  |
| 100 | 1.13.3.18.6 | **建筑电气及设备安装** | 13d | 2025-07-16 | 2025-07-31 |  | 54d |  |  |
| 101 | 1.13.3.18.6.1 | 防雷接地焊接 | 3d | 2025-07-16 | 2025-07-18 | 71 | 54d | 0d | finish no earlier than 2020-01-31 |
| 102 | 1.13.3.18.6.2 | 一层主体配管线 | 5d | 2025-07-19 | 2025-07-24 | 101 | 54d | 0d |  |
| 103 | 1.13.3.18.6.3 | 一层电气设备照明安装调试 | 5d | 2025-07-25 | 2025-07-31 | 102 | 54d |  |  |

| ID | WBS | Task | Duration | Start | Finish | Predecessors | Total slack | Free slack | Constraint |
| --- | --- | --- | --- | --- | --- | --- | --- | --- | --- |
| 104 | 1.13.3.18.7 | **通风、消防与空调工程** | 23d | 2025-06-21 | 2025-07-19 |  | 63d |  |  |
| 105 | 1.13.3.18.7.1 | 风管、消防管件制作安装 | 10d | 2025-06-21 | 2025-07-03 | 75 | 63d | 0d | finish no earlier than 2020-03-15 |
| 106 | 1.13.3.18.7.2 | 管、阀安装 | 5d | 2025-07-04 | 2025-07-10 | 105 | 63d | 0d |  |
| 107 | 1.13.3.18.7.3 | 管阀调试及启闭试验 | 3d | 2025-07-11 | 2025-07-14 | 106 | 63d | 0d | start no earlier than 2020-03-16 |
| 108 | 1.13.3.18.7.4 | 机组设备安装 | 5d | 2025-07-15 | 2025-07-19 | 107 | 63d |  | start no earlier than 2020-03-19 |
| 109 | 1.13.3.18.8 | 屋面和外墙 | 12d | 2025-06-25 | 2025-07-10 | 92 | 60d | 8d | start no earlier than 2020-02-11 |
| 110 | 1.13.3.18.9 | 其他设备安装调试 | 10d | 2025-07-21 | 2025-08-01 | 109 | 52d |  | start no earlier than 2025-07-21 |
| 111 | 1.13.3.18.10 | **4#垃圾中转站** | 226d? | 2024-08-30 | 2025-06-30 |  |  |  |  |
| 112 | 1.13.3.18.10.1 | **地基与基础** | 10d | 2024-08-30 | 2024-09-11 |  | 278d |  |  |
| 113 | 1.13.3.18.10.1.1 | 基底整平 | 1d | 2024-08-30 | 2024-08-30 | 19 | 278d | 0d | start no earlier than 2024-08-26 |
| 114 | 1.13.3.18.10.1.2 | 基础垫层 | 1d | 2024-09-01 | 2024-09-01 | 113 | 278d | 0d | start no earlier than 2019-12-05 |
| 115 | 1.13.3.18.10.1.3 | 独立基础 | 3d | 2024-09-02 | 2024-09-04 | 114 | 278d | 0d | start no earlier than 2024-08-27 |
| 116 | 1.13.3.18.10.1.4 | 基础梁柱 | 5d | 2024-09-05 | 2024-09-11 | 115 | 278d | 0d |  |
| 117 | 1.13.3.18.10.2 | 回填 | 2d | 2024-09-12 | 2024-09-13 | 116 | 278d | 0d | start no earlier than 2020-02-05 |
| 118 | 1.13.3.18.10.3 | **主体结构** | 15d | 2024-09-14 | 2024-10-03 |  | 278d |  |  |
| 119 | 1.13.3.18.10.3.1 | 一层梁板柱 | 6d | 2024-09-14 | 2024-09-20 | 117 | 278d | 0d |  |
| 120 | 1.13.3.18.10.3.2 | 屋面层 | 9d | 2024-09-23 | 2024-10-03 | 119 | 278d |  |  |
| 121 | 1.13.3.18.10.4 | **二次结构及装饰装修** | 10d | 2025-05-10 | 2025-05-21 |  | 100d |  |  |
| 122 | 1.13.3.18.10.4.1 | 一层 | 10d | 2025-05-10 | 2025-05-21 | 5 | 100d | 0d | start no earlier than 2025-05-10 |
| 123 | 1.13.3.18.10.5 | **给排水及采暖工程** | 5d | 2025-05-22 | 2025-05-26 |  | 101d |  |  |
| 124 | 1.13.3.18.10.5.1 | 套管预留预埋 | 3d | 2025-05-22 | 2025-05-24 | 122 | 101d | 0d | start no earlier than 2019-12-06 |
| 125 | 1.13.3.18.10.5.2 | 一层管道安装 | 2d | 2025-05-25 | 2025-05-26 | 124 | 101d | 0d |  |
| 126 | 1.13.3.18.10.6 | **建筑电气及设备安装** | 5d | 2025-05-27 | 2025-06-01 |  | 101d |  |  |
| 127 | 1.13.3.18.10.6.1 | 防雷接地焊接 | 2d | 2025-05-27 | 2025-05-28 | 125 | 101d | 0d | finish no earlier than 2020-01-31 |
| 128 | 1.13.3.18.10.6.2 | 一层主体配管线 | 3d | 2025-05-29 | 2025-06-01 | 127 | 101d |  |  |
| 129 | 1.13.3.18.10.7 | 屋面和外墙 | 5d | 2025-05-22 | 2025-05-26 | 122 | 100d | 0d | start no earlier than 2020-02-11 |
| 130 | 1.13.3.18.10.8 | 其他设备安装调试 | 5d | 2025-05-27 | 2025-06-01 | 129 | 100d |  | finish no earlier than 2020-06-15 |

| ID | WBS | Task | Duration | Start | Finish | Predecessors | Total slack | Free slack | Constraint |
| --- | --- | --- | --- | --- | --- | --- | --- | --- | --- |
| 131 | 1.13.3.18.10.9 | **室外工程** | 39d | 2025-07-01 | 2025-08-20 |  |  |  |  |
| 132 | 1.13.3.18.10.9.1 | 污水处理设备 | 10d | 2025-07-01 | 2025-07-12 | 7 | 69d |  | start no earlier than 2025-06-01 |
| 133 | 1.13.3.18.10.9.2 | 化粪池 | 5d | 2025-06-01 | 2025-06-05 |  | 96d |  | finish no earlier than 2025-06-05 |
| 134 | 1.13.3.18.10.9.3 | 调节池 | 5d | 2025-06-04 | 2025-06-10 |  | 94d |  | start no earlier than 2025-06-04 |
| 135 | 1.13.3.18.10.9.4 | 污泥池 | 5d | 2025-06-06 | 2025-06-12 |  | 92d |  | start no earlier than 2025-06-06 |
| 136 | 1.13.3.18.10.9.5 | **室外给排水** | 13d | 2025-06-03 | 2025-06-19 |  |  |  |  |
| 137 | 1.13.3.18.10.9.5.1 | 沟槽开挖回填 | 5d | 2025-06-12 | 2025-06-18 | 5, 41 | 80d | 0d | start no earlier than 2025-06-03 |
| 138 | 1.13.3.18.10.9.5.2 | 管线铺设 | 3d | 2025-06-19 | 2025-06-21 | 137 | 80d | 0d |  |
| 139 | 1.13.3.18.10.9.5.3 | 检查井 | 5d | 2025-06-23 | 2025-06-27 | 138 | 80d |  |  |
| 140 | 1.13.3.18.10.9.5.4 | **室外暖通** | 11d | 2025-06-03 | 2025-06-17 |  |  |  |  |
| 141 | 1.13.3.18.10.9.5.4.1 | 沟槽开挖回填 | 5d | 2025-06-03 | 2025-06-09 |  | 88d | 0d | start no earlier than 2025-06-03 |
| 142 | 1.13.3.18.10.9.5.4.2 | 直埋式暖通保温管线铺设 | 3d | 2025-06-10 | 2025-06-12 | 141 | 88d | 0d |  |
| 143 | 1.13.3.18.10.9.5.4.3 | 管阀调试及启闭试验 | 3d | 2025-06-13 | 2025-06-17 | 142 | 88d |  | start no earlier than 2020-03-16 |
| 144 | 1.13.3.18.10.9.5.4.4 | **室外消防** | 14d | 2025-06-06 | 2025-06-24 |  |  |  |  |
| 145 | 1.13.3.18.10.9.5.4.4.1 | 沟槽开挖回填 | 5d | 2025-06-06 | 2025-06-12 |  | 84d | 0d | start no earlier than 2025-06-06 |
| 146 | 1.13.3.18.10.9.5.4.4.2 | 管线铺设 | 3d | 2025-06-13 | 2025-06-17 | 145 | 84d | 0d |  |
| 147 | 1.13.3.18.10.9.5.4.4.3 | 室外消防栓 | 5d | 2025-06-18 | 2025-06-23 | 146 | 84d |  |  |
| 148 | 1.13.3.18.10.9.6 | **室外电气** | 10d | 2025-07-01 | 2025-07-12 |  | 11d |  |  |
| 149 | 1.13.3.18.10.9.6.1 | 沟槽开挖回填 | 2d | 2025-07-01 | 2025-07-02 | 53, 43 | 11d | 0d |  |
| 150 | 1.13.3.18.10.9.6.2 | 砌筑井 | 5d | 2025-07-03 | 2025-07-09 | 149 | 61d | 0d |  |
| 151 | 1.13.3.18.10.9.6.3 | 缆线铺设及室外照明 | 3d | 2025-07-10 | 2025-07-12 | 150 | 61d | 0d |  |
| 152 | 1.13.3.18.10.9.7 | **室外土建** | 34d | 2025-07-04 | 2025-08-18 |  |  |  |  |
| 153 | 1.13.3.18.10.9.7.1 | 混凝土地坪 | 10d | 2025-07-16 | 2025-07-28 | 5, 79, 149 | 1d | 0d | finish no earlier than 2019-12-04 |
| 154 | 1.13.3.18.10.9.7.2 | 铁艺围栏 | 7d | 2025-07-14 | 2025-07-21 | 151 | 61d |  | start no earlier than 2025-06-17 |
| 155 | 1.13.3.18.10.9.7.3 | 透水砖地坪及路缘石 | 7d | 2025-07-29 | 2025-08-06 | 153 | 1d | 0d | start no earlier than 2024-08-27 |
| 156 | 1.13.3.18.10.9.7.4 | 绿化种植草坪 | 5d | 2025-08-07 | 2025-08-13 | 155 | 1d | 0d |  |
| 157 | 1.13.3.18.10.9.8 | 场地标线等 | 5d | 2025-08-14 | 2025-08-20 | 156 | 1d | 0d | start no earlier than 2020-02-05 |

| ID | WBS | Task | Duration | Start | Finish | Predecessors | Total slack | Free slack | Constraint |
| --- | --- | --- | --- | --- | --- | --- | --- | --- | --- |
| 158 | 1.13.4 | **项目验收计划** | 22d | 2025-08-21 | 2025-09-19 |  |  |  |  |
| 159 | 1.13.4.1 | 管网验收 | 2d | 2025-08-21 | 2025-08-22 | 157 | 1d | 0d | start no earlier than 2020-03-21 |
| 160 | 1.13.4.2 | 防雷验收 | 2d | 2025-08-25 | 2025-08-26 | 159 | 1d | 0d | start no earlier than 2020-06-01 |
| 161 | 1.13.4.3 | 规划验收 | 2d | 2025-08-27 | 2025-08-28 | 160 | 1d | 0d | start no earlier than 2020-06-03 |
| 162 | 1.13.4.4 | 环保验收 | 2d | 2025-08-29 | 2025-09-01 | 161 | 1d | 0d | start no earlier than 2020-06-05 |
| 163 | 1.13.4.5 | 绿建核查 | 2d | 2025-09-02 | 2025-09-03 | 162 | 1d | 0d | start no earlier than 2020-06-07 |
| 164 | 1.13.4.6 | 节能验收 | 2d | 2025-09-04 | 2025-09-05 | 163 | 1d | 0d |  |
| 165 | 1.13.4.7 | 弱电检测 | 2d | 2025-09-08 | 2025-09-09 | 164 | 1d | 0d | start no earlier than 2020-06-11 |
| 166 | 1.13.4.8 | 电检、消捡 | 2d | 2025-09-10 | 2025-09-11 | 165 | 1d | 0d | start no earlier than 2020-06-13 |
| 167 | 1.13.4.9 | 消防验收 | 3d | 2025-09-12 | 2025-09-16 | 166 | 1d | 0d | start no earlier than 2020-06-15 |
| 168 | 1.13.4.10 | 道路、绿化、照明等四方验收 | 3d | 2025-09-17 | 2025-09-19 | 167 | 1d | 0d | start no earlier than 2020-06-15 |
| 169 | 1.13.4.11 | 四方验收 | 2d | 2025-09-22 | 2025-09-23 | 168 | 1d | 0d | start no earlier than 2020-06-18 |
| 170 | 1.13.5 | **竣工验收及交付** | 15d | 2025-09-24 | 2025-10-14 |  | 1d |  |  |
| 171 | 1.13.5.1 | 竣工结算 | 2d | 2025-09-24 | 2025-09-25 | 169 | 1d | 0d | start no earlier than 2020-06-20 |
| 172 | 1.13.5.2 | 档案馆资料预验收 | 2d | 2025-09-26 | 2025-09-29 | 171 | 1d | 0d | start no earlier than 2020-06-20 |
| 173 | 1.13.5.3 | 档案馆资料验收 | 2d | 2025-09-30 | 2025-10-01 | 172 | 1d | 0d | start no earlier than 2020-06-20 |
| 174 | 1.13.5.4 | 办理《房屋建筑工程竣工验收备案单》 | 2d | 2025-10-02 | 2025-10-03 | 173 | 1d | 0d |  |
| 175 | 1.13.5.5 | 办理综合验收备案证明 | 2d | 2025-10-06 | 2025-10-07 | 174 | 1d | 0d |  |
| 176 | 1.13.5.6 | 竣工移交 | 5d | 2025-10-08 | 2025-10-14 | 175 | 1d |  |  |
